# 社区团购开发

Schedule from MS Project, 2021-03-08 to 2021-06-10, costs in ¥, A marks actual dates.

## Calendars

- Standard: Mon-Fri 08:00-12:00, 13:00-17:00; Sat-Sun off.

## Resources

| Resource | Rate | Cost per use |
| --- | --- | --- |
| 刘书宇 | 60 | 60 |
| 谢子文 | 60 | 60 |
| 梁泽生 | 60 | 60 |
| 彭昕怡 | 60 | 60 |
| 张安硕 | 60 | 60 |
| 所有人 | 300 | 300 |

## Schedule

| ID | WBS | Task | Duration | Start | Finish | Predecessors | Complete | Remaining | Actual start | Baseline start | Baseline finish | Baseline duration | Total slack | Constraint | Resources | Work | Actual work | Cost | Actual cost | 负责人 | 输入 | 工具与技术 | 输出 |
| --- | --- | --- | --- | --- | --- | --- | --- | --- | --- | --- | --- | --- | --- | --- | --- | --- | --- | --- | --- | --- | --- | --- | --- |
| 1 | 1 | **启动** | 5d | 2021-03-08 A | 2021-03-12 |  | 65% | 1.77d |  | 2021-03-08 | 2021-03-12 | 5d |  |  |  | 48h | 43.11h | 7,500 | 7,500 | 谢子文、梁泽生、彭昕怡、张安硕、刘书宇 |  |  |  |
| 2 | 1.1 | **前期准备** | 5d | 2021-03-08 A | 2021-03-12 |  | 65% | 1.77d |  | 2021-03-08 | 2021-03-12 | 5d | 64d |  |  | 48h | 43.11h | 7,500 | 7,500 | 谢子文、梁泽生、彭昕怡、张安硕、刘书宇 |  |  |  |
| 3 | 1.1.1 | 项目启动会议 | 0.25d | 2021-03-10 A | 2021-03-10 A |  | 100% |  |  | 2021-03-08 | 2021-03-08 | 1d |  |  | 所有人 | 2h | 2h | 900 | 900 | 谢子文、梁泽生、彭昕怡、张安硕、刘书宇 | 选题说明、小组资产 | 小组会议、与助教讨论、线上讨论 | 会议记录 |
| 4 | 1.1.2 | 制定项目内容 | 0.5d | 2021-03-08 A | 2021-03-08 A |  | 100% |  |  | 2021-03-08 | 2021-03-09 | 2d |  |  | 刘书宇 | 4h | 4h | 300 | 300 | 谢子文、刘书宇 | 选题说明、小组资产 | 小组会议、与助教讨论、线上讨论 | 项目内容 |
| 5 | 1.1.3 | 确定项目方法 | 1d | 2021-03-08 A | 2021-03-08 A |  | 100% |  |  | 2021-03-09 | 2021-03-10 | 2d |  |  | 谢子文 | 8h | 8h | 540 | 540 | 彭昕怡 | 选题说明、小组资产 | 小组会议、与助教讨论、线上讨论 | 项目方法 |
| 6 | 1.1.4 | 同类型产品调研 | 0.25d | 2021-03-08 A | 2021-03-08 A | 4 | 100% |  |  | 2021-03-10 | 2021-03-11 | 2d |  | finish no earlier than 2020-10-03 | 彭昕怡; 张安硕 | 4h | 4h | 360 | 360 | 彭昕怡、张安硕 | 选题说明、小组资产 | 小组会议、与助教讨论、线上讨论 | 产品调研 |
| 7 | 1.1.5 | 各项配置和约定 | 0.5d | 2021-03-09 A | 2021-03-09 A | 5 | 100% |  |  | 2021-03-11 | 2021-03-11 | 1d |  |  | 梁泽生 | 4h | 4h | 300 | 300 | 梁泽生 | 选题说明、小组资产 | 小组会议、与助教讨论、线上讨论 |  |
| 8 | 1.1.6 | **知识技能学习** | 5d | 2021-03-08 | 2021-03-12 |  | 50% | 2.5d | 2021-03-09 | 2021-03-08 | 2021-03-12 | 5d | 64d |  |  | 10h | 5.11h |  |  | 谢子文、梁泽生、彭昕怡、张安硕、刘书宇 |  |  |  |
| 9 | 1.1.6.1 | **APP基础知识学习** | 3d | 2021-03-08 | 2021-03-10 A |  | 100% |  | 2021-03-09 | 2021-03-08 | 2021-03-10 | 3d |  |  |  | 4h | 4h |  |  | 刘书宇 |  |  |  |
| 10 | 1.1.6.1.1 | APP基础知识学习第一阶段 | 2d | 2021-03-09 A | 2021-03-10 A |  | 100% |  |  | 2021-03-09 | 2021-03-10 | 2d |  | finish no earlier than 2021-03-10 |  | 2h | 2h |  |  | 刘书宇 |  |  |  |
| 11 | 1.1.6.1.2 | APP基础知识学习第二阶段 | 2d | 2021-03-09 A | 2021-03-10 A |  | 100% |  |  | 2021-03-09 | 2021-03-10 | 2d |  | finish no earlier than 2021-03-10 |  | 2h | 2h |  |  | 刘书宇 |  |  |  |
| 12 | 1.1.6.2 | **原型设计学习** | 4d | 2021-03-09 | 2021-03-12 |  | 27% | 2.93d | 2021-03-10 | 2021-03-09 | 2021-03-12 | 4d |  |  |  | 4h | 0.94h |  |  | 张安硕、彭昕怡 |  |  |  |
| 13 | 1.1.6.2.1 | 原型设计学习第一阶段 | 3d | 2021-03-10 A | 2021-03-12 |  | 39% | 1.83d |  | 2021-03-10 | 2021-03-12 | 3d | 64d | finish no earlier than 2021-03-12 |  | 2h | 0.78h |  |  | 张安硕、彭昕怡 |  |  |  |
| 14 | 1.1.6.2.2 | 原型设计学习第二阶段 | 2d | 2021-03-11 A | 2021-03-12 |  | 8% | 1.83d |  | 2021-03-11 | 2021-03-12 | 2d | 64d | finish no earlier than 2021-03-12 |  | 2h | 0.17h |  |  | 张安硕、彭昕怡 |  |  |  |
| 15 | 1.1.6.3 | **课程书籍阅读学习** | 3d | 2021-03-10 | 2021-03-12 |  | 8% | 2.75d | 2021-03-11 | 2021-03-10 | 2021-03-12 | 3d |  |  |  | 2h | 0.17h |  |  | 谢子文、梁泽生、彭昕怡、张安硕、刘书宇 |  |  |  |
| 16 | 1.1.6.3.1 | 课程书籍阅读学习 | 2d | 2021-03-11 A | 2021-03-12 |  | 8% | 1.83d |  | 2021-03-11 | 2021-03-12 | 2d | 64d | finish no earlier than 2021-03-12 |  | 2h | 0.17h |  |  | 谢子文、梁泽生、彭昕怡、张安硕、刘书宇 |  |  |  |
| 17 | 1.1.7 | 小组总结会议 | 2d | 2021-03-08 A | 2021-03-09 A |  | 100% |  |  | 2021-03-11 | 2021-03-12 | 2d |  | start no earlier than 2021-03-08 | 所有人 | 16h | 16h | 5,100 | 5,100 | 谢子文、梁泽生、彭昕怡、张安硕、刘书宇 | 选题说明、小组资产 | 小组会议、与助教讨论、线上讨论 | 会议记录 |
| 18 | 2 | **计划** | 8.94d | 2021-03-15 A | 2021-03-25 A | 1 | 100% |  |  | 2021-03-12 | 2021-03-25 | 10d |  |  |  | 71.8h | 71.8h | 10,128 | 10,128 | 谢子文、梁泽生、彭昕怡、张安硕、刘书宇 |  |  |  |
| 19 | 2.1 | **项目计划设计** | 1.06d | 2021-03-15 A | 2021-03-16 A | 2 | 100% |  |  | 2021-03-12 | 2021-03-18 | 5d |  |  |  | 21h | 21h | 3,840 | 3,840 | 谢子文、梁泽生、彭昕怡、张安硕、刘书宇 |  |  |  |
| 20 | 2.1.1 | 小组研讨会议 | 0.25d | 2021-03-15 A | 2021-03-15 A |  | 100% |  |  | 2021-03-12 | 2021-03-12 | 0.1d |  |  | 所有人 | 2h | 2h | 900 | 900 | 谢子文、梁泽生、彭昕怡、张安硕、刘书宇 | 选题说明、往期文档 | 小组会议、与助教讨论、线上讨论 | 会议记录 |
| 21 | 2.1.2 | 项目计划书制订 | 0.38d | 2021-03-15 A | 2021-03-15 A |  | 100% |  |  | 2021-03-15 | 2021-03-15 | 1d |  | start no earlier than 2021-03-14 | 刘书宇 | 3h | 3h | 240 | 240 | 彭昕怡 | 选题说明、往期文档会议记录 | 小组会议、与助教讨论、线上讨论 | 项目计划书 |
| 22 | 2.1.3 | 项目章程制订 | 0.5d | 2021-03-15 A | 2021-03-15 A |  | 100% |  |  | 2021-03-15 | 2021-03-15 | 0.5d |  | finish no earlier than 2021-03-14 | 梁泽生 | 4h | 4h | 300 | 300 | 梁泽生 | 选题说明、往期文档会议记录 | 小组会议、与助教讨论、线上讨论 | 项目章程 |
| 23 | 2.1.4 | 项目计划ppt制作 | 0.19d | 2021-03-15 A | 2021-03-15 A | 21 | 100% |  |  | 2021-03-16 | 2021-03-17 | 1d |  | start no earlier than 2021-03-13 | 彭昕怡; 张安硕 | 3h | 3h | 300 | 300 | 张安硕 | 选题说明、往期文档会议记录 | 小组会议、与助教讨论、线上讨论 | 项目计划PPT |
| 24 | 2.1.5 | 项目ppt修改 | 0.5d | 2021-03-15 A | 2021-03-16 A | 23 | 100% |  |  | 2021-03-18 | 2021-03-18 | 1d |  | start no earlier than 2021-03-14 | 谢子文 | 4h | 4h | 300 | 300 | 彭昕怡、张安硕、刘书宇 | 选题说明、往期文档会议记录 | 小组会议、与助教讨论、线上讨论 | 修改后的项目计划PPT |
| 25 | 2.1.6 | 小组总结会议 | 0.62d | 2021-03-15 A | 2021-03-15 A |  | 100% |  |  | 2021-03-18 | 2021-03-18 | 1d |  |  | 所有人 | 5h | 5h | 1,800 | 1,800 | 谢子文、梁泽生、彭昕怡、张安硕、刘书宇 | 选题说明、往期文档 | 小组会议、与助教讨论、线上讨论 | 会议记录 |

| ID | WBS | Task | Type | Duration | Start | Finish | Predecessors | Complete | Remaining | Baseline start | Baseline finish | Baseline duration | Total slack | Free slack | Constraint | Resources | Work | Actual work | Cost | Actual cost | 负责人 | 输入 | 工具与技术 | 输出 |
| --- | --- | --- | --- | --- | --- | --- | --- | --- | --- | --- | --- | --- | --- | --- | --- | --- | --- | --- | --- | --- | --- | --- | --- | --- |
| 26 | 2.2 | **可行性分析** |  | 7.88d | 2021-03-16 A | 2021-03-25 A | 19 | 100% |  | 2021-03-13 | 2021-03-23 | 7d |  |  |  |  | 50.8h | 50.8h | 6,288 | 6,288 | 谢子文、梁泽生、彭昕怡、张安硕、刘书宇 |  |  |  |
| 27 | 2.2.1 | 小组研讨会议 |  | 1d | 2021-03-16 A | 2021-03-17 A |  | 100% |  | 2021-03-13 | 2021-03-13 | 1d |  |  |  | 所有人 | 8h | 8h | 2,700 | 2,700 | 谢子文、梁泽生、彭昕怡、张安硕、刘书宇 | 选题说明、往期文档 | 小组会议、与助教讨论、线上讨论 | 会议记录 |
| 28 | 2.2.2 | 可行性分析 |  | 2d | 2021-03-16 A | 2021-03-18 A |  | 100% |  | 2021-03-13 | 2021-03-14 | 2d |  |  |  | 梁泽生 | 16h | 16h | 1,020 | 1,020 | 谢子文 | 选题说明、往期文档会议记录 | 小组会议、与助教讨论、线上讨论 | 可行性分析思考 |
| 29 | 2.2.3 | 可行性分析报告编写 | milestone | 2d | 2021-03-18 A | 2021-03-23 A | 28 | 100% |  | 2021-03-17 | 2021-03-19 | 2d |  |  |  | 彭昕怡 | 16h | 16h | 1,020 | 1,020 | 谢子文 | 选题说明、往期文档会议记录 | 小组会议、与助教讨论、线上讨论 | 可行性分析报告 |
| 30 | 2.2.4 | 知识技能学习 |  | 0.1d | 2021-03-16 A | 2021-03-16 A |  | 100% |  | 2021-03-16 | 2021-03-16 | 0.1d |  |  |  | 谢子文 | 0.8h | 0.8h | 108 | 108 | 谢子文、梁泽生、彭昕怡、张安硕、刘书宇 | 选题说明、往期文档会议记录 | 小组会议、与助教讨论、线上讨论 |  |
| 31 | 2.2.5 | 可行性分析报告的修改 |  | 1d | 2021-03-23 A | 2021-03-25 A | 29 | 100% |  | 2021-03-22 | 2021-03-23 | 2d |  |  | start no earlier than 2021-03-12 | 张安硕 | 8h | 8h | 540 | 540 | 谢子文、梁泽生 | 选题说明、往期文档会议记录 | 小组会议、与助教讨论、线上讨论 | 修改后的可行性分析报告 |
| 32 | 2.2.6 | 小组总结会议 |  | 0.25d | 2021-03-16 A | 2021-03-17 A |  | 100% |  | 2021-03-18 | 2021-03-18 | 0.1d |  |  |  | 所有人 | 2h | 2h | 900 | 900 | 谢子文、梁泽生、彭昕怡、张安硕、刘书宇 | 选题说明、往期文档 | 小组会议、与助教讨论、线上讨论 | 会议记录 |
| 33 | 2.2.7 | 项目计划阶段评审 | milestone | 0d | 2021-03-25 A | 2021-03-25 A |  | 100% |  | 2021-03-18 | 2021-03-18 | 0d |  |  | start no earlier than 2021-03-25 |  |  |  |  |  |  |  |  |  |
| 34 | 3 | **执行** |  | 36d | 2021-03-25 A | 2021-05-13 | 18 | 28% | 25.82d | 2021-03-25 | 2021-04-27 | 24d | -9.12d | 0d |  |  | 579.6h | 170.8h | 64,200 | 22,680 | 谢子文、梁泽生、彭昕怡、张安硕、刘书宇 |  |  |  |
| 35 | 3.1 | **需求获取** |  | 28d | 2021-03-25 A | 2021-05-03 | 19 | 49% | 14.27d | 2021-03-25 | 2021-04-02 | 7d | -4d | 0d |  |  | 347.6h | 170.8h | 40,740 | 22,680 | 谢子文、张安硕、彭昕怡、梁泽生、刘书宇 |  |  |  |
| 36 | 3.1.1 | 小组研讨会议 |  | 1d | 2021-03-25 A | 2021-03-25 A |  | 100% |  | 2021-03-25 | 2021-03-25 | 1d |  |  | finish no earlier than 2021-03-25 | 所有人 | 8h | 8h | 2,700 | 2,700 | 谢子文、张安硕、彭昕怡、梁泽生、刘书宇 | 选题说明、往期文档 | 小组会议、与助教讨论、线上讨论 | 会议记录 |
| 37 | 3.1.2 | 往期文档的修订 | manual | 2d | 2021-03-29 A | 2021-03-30 A |  | 100% |  |  |  |  |  |  |  | 梁泽生; 彭昕怡; 张安硕 | 16h | 16h | 1,140 | 1,140 |  | 往期文档 | 小组讨论、线上讨论 | 修订后的文档 |
| 38 | 3.1.3 | UE学习通读 | manual | 2d | 2021-03-27 A | 2021-03-29 A |  | 100% |  | 2021-03-26 | 2021-03-28 | 2d |  |  | start no earlier than 2021-03-27 | 所有人 | 16h | 16h | 5,100 | 5,100 | 彭昕怡 | 侯老师的课件 | 自行学习 | 完成效果 |
| 39 | 3.1.4 | UE学习第2阶段 | manual | 2d | 2021-03-31 A | 2021-04-01 A |  | 100% |  |  |  |  |  |  |  | 所有人 | 16h | 16h | 5,100 | 5,100 |  | 侯老师的课件 | 自行学习 | 完成效果 |
| 40 | 3.1.5 | 采访愿景 | manual | 0.25d | 2021-04-02 A | 2021-04-02 A |  | 100% |  |  |  |  |  |  |  | 所有人 | 2h | 2h | 900 | 900 |  | UE学习成果 | 与助教线上讨论 | 愿景分析 |
| 41 | 3.1.6 | 编写项目视图与范围 |  | 2d | 2021-04-02 A | 2021-04-06 A |  | 100% |  | 2021-03-27 | 2021-03-29 | 2d |  |  |  | 彭昕怡; 张安硕 | 32h | 32h | 2,040 | 2,040 | 梁泽生 | 选题说明、往期文档会议记录 | 小组会议、与助教讨论、线上讨论 | 愿景与范围文档 |
| 42 | 3.1.7 | 用户群分类 |  | 2d | 2021-04-05 A | 2021-04-06 A |  | 100% |  |  |  |  |  |  | finish no earlier than 2021-04-06 | 刘书宇 | 16h | 16h | 1,020 | 1,020 |  | 项目计划 | 小组讨论 | 用户群分类文档 |
| 43 | 3.1.8 | 项目需求获取计划初稿 | manual | 2d | 2021-04-05 A | 2021-04-06 A |  | 100% |  |  |  |  |  |  |  | 梁泽生 | 16h | 16h | 1,020 | 1,020 |  | 课本内容、选题说明 | 小组讨论 | 项目需求获取计划草稿 |
| 44 | 3.1.9 | 用户代表分析 | manual | 2d | 2021-04-05 A | 2021-04-06 A |  | 100% |  |  |  |  |  |  |  | 谢子文 | 16h | 16h | 1,020 | 1,020 |  | 课本内容、选题说明 | 小组讨论 | 用户代表分析初稿 |
| 45 | 3.1.10 | 小组商讨会议 | manual | 0.1d | 2021-04-06 A | 2021-04-06 A |  | 100% |  |  |  |  |  |  |  | 所有人 | 0.8h | 0.8h | 540 | 540 |  | 各自的工作成果 | 小组讨论、和助教沟通 | 会议记录 |
| 46 | 3.1.11 | 愿景范围文档审核和修订 | manual | 2d | 2021-04-07 A | 2021-04-08 A |  | 100% |  |  |  |  |  |  |  | 刘书宇; 彭昕怡 | 16h | 16h | 1,080 | 1,080 |  | 愿景与范围文档初稿 | 与编写者交流 | 愿景与范围文档修订版 |
| 47 | 3.1.12 | 用户群分类文档审核和修订 | manual | 2d | 2021-04-07 A | 2021-04-08 A |  | 100% |  |  |  |  |  |  |  | 张安硕 | 16h | 16h | 1,020 | 1,020 |  | 用户群分类文档初稿 | 与编写者交流 | 用户群分类文档修订版 |
| 48 | 3.1.13 | 用户代表分析文档审核和修订 | manual | 2d | 2021-04-07 | 2021-04-08 |  |  |  |  |  |  |  |  |  | 梁泽生; 谢子文 | 32h |  | 2,040 |  |  | 用户代表分析初稿 | 与编写者交流 | 用户代表分析修订版 |
| 49 | 3.1.14 | 小组商讨会议 | manual | 0.1d | 2021-04-08 | 2021-04-08 |  |  |  |  |  |  |  |  |  | 所有人 | 0.8h |  | 540 |  |  | 各自的工作成果 | 小组讨论、和助教沟通 | 会议记录 |
| 50 | 3.1.15 | 确定使用实例 |  | 2d | 2021-04-09 | 2021-04-12 |  |  |  | 2021-03-28 | 2021-03-29 | 2d | 7.88d |  | start no earlier than 2021-04-09 | 张安硕 | 16h |  | 1,020 |  | 谢子文 | 选题说明、往期文档会议记录 | 小组会议、与助教讨论、线上讨论 | 实例 |
| 51 | 3.1.16 | 分析用户工作流程 | manual | 2d | 2021-04-09 | 2021-04-12 | 48 |  |  | 2021-03-29 | 2021-03-30 | 2d |  |  | start no earlier than 2021-04-09 | 刘书宇 | 16h |  | 1,020 |  | 彭昕怡 | 选题说明、往期文档会议记录 | 小组会议、与助教讨论、线上讨论 | 用户工作流程 |
| 52 | 3.1.17 | 确定质量属性 |  | 2d | 2021-04-09 | 2021-04-12 |  |  |  | 2021-03-30 | 2021-03-31 | 2d | 7.88d |  | start no earlier than 2021-04-09 | 彭昕怡 | 16h |  | 1,020 |  | 张安硕 | 选题说明、往期文档会议记录 | 小组会议、与助教讨论、线上讨论 | 质量属性 |
| 53 | 3.1.18 | 查找原型设计资料 | manual | 2d | 2021-04-13 | 2021-04-14 |  |  |  |  |  |  |  |  |  | 彭昕怡 | 16h |  | 1,020 |  |  | 愿景范围文档、会议记录 | 网上查找、小组讨论 | 原型设计模板和设计意见 |
| 54 | 3.1.19 | 原型设计第一阶段 |  | 2d | 2021-04-15 | 2021-04-16 |  |  |  | 2021-03-27 | 2021-03-28 | 2d | 0.88d |  | start no earlier than 2021-04-14 | 谢子文 | 16h |  | 1,020 |  | 刘书宇 | 选题说明、往期文档会议记录 | 小组会议、与助教讨论、线上讨论 | 用户群和用户代表 |
| 55 | 3.1.20 | 原型设计第一阶段确认 | manual | 2d | 2021-04-20 | 2021-04-21 |  |  |  |  |  |  |  |  |  | 所有人 | 16h |  | 5,100 |  |  | 原型设计 | 与助教商讨 | 原型的修改意见 |
| 56 | 3.1.21 | 原型设计第一阶段修改 | manual | 2d | 2021-04-26 | 2021-04-27 |  |  |  |  |  |  |  |  |  | 刘书宇 | 16h |  | 1,020 |  |  | 原型设计、修改意见 | 小组讨论 | 修改后的原型 |
| 57 | 3.1.22 | 采访用户需求 |  | 1d | 2021-04-29 | 2021-04-29 | 54, 38 |  |  | 2021-03-29 | 2021-03-31 | 3d | -7.12d | 0d | start no earlier than 2021-04-29 | 梁泽生 | 8h |  | 540 |  | 梁泽生 | 选题说明、往期文档会议记录 | 小组会议、与助教讨论、线上讨论 | 用户需求记录 |
| 58 | 3.1.23 | 总结用户需求为报告 |  | 2d | 2021-04-30 | 2021-05-03 | 57 |  |  | 2021-04-01 | 2021-04-02 | 2d | -7.12d | 0d |  | 张安硕 | 16h |  | 1,020 |  | 刘书宇 | 选题说明、往期文档会议记录 | 小组会议、与助教讨论、线上讨论 | 用户需求报告 |
| 59 | 3.1.24 | 小组总结会议 |  | 1d | 2021-04-29 | 2021-04-29 |  |  |  | 2021-04-01 | 2021-04-01 | 1d | -5.12d | 0d | start no earlier than 2021-04-29 | 所有人 | 8h |  | 2,700 |  | 谢子文、张安硕、彭昕怡、梁泽生、刘书宇 | 选题说明、往期文档 | 小组会议、与助教讨论、线上讨论 | 会议记录 |
| 60 | 3.1.25 | 需求获取阶段总结 | milestone | 0d | 2021-04-29 | 2021-04-29 |  |  |  | 2021-04-01 | 2021-04-01 | 0d | -4.12d | 0d | start no earlier than 2021-04-29 |  |  |  |  |  |  |  |  |  |

| ID | WBS | Task | Type | Duration | Start | Finish | Predecessors | Baseline start | Baseline finish | Baseline duration | Total slack | Free slack | Resources | Work | Cost | 负责人 | 输入 | 工具与技术 | 输出 |
| --- | --- | --- | --- | --- | --- | --- | --- | --- | --- | --- | --- | --- | --- | --- | --- | --- | --- | --- | --- |
| 61 | 3.2 | **需求分析** |  | 5d | 2021-05-03 | 2021-05-10 | 35 | 2021-03-29 | 2021-04-14 | 13d | -9.12d | 0d |  | 144h | 13,500 | 谢子文、张安硕、彭昕怡、梁泽生、刘书宇 |  |  |  |
| 62 | 3.2.1 | 小组研讨会议 |  | 1d | 2021-05-04 | 2021-05-04 |  | 2021-04-06 | 2021-04-06 | 1d | -5.12d | 0d | 所有人 | 8h | 2,700 | 谢子文、张安硕、彭昕怡、梁泽生、刘书宇 | 选题说明、往期文档 | 小组会议、与助教讨论、线上讨论 | 会议记录 |
| 63 | 3.2.2 | 原型设计第二阶段 |  | 2d | 2021-05-07 | 2021-05-10 | 38 | 2021-03-29 | 2021-03-30 | 2d | -9.12d | 0d | 刘书宇 | 16h | 1,020 | 张安硕、刘书宇 | 选题说明、往期文档会议记录 | 小组会议、与助教讨论、线上讨论 | 高保真原型 |
| 64 | 3.2.3 | 绘制关联图 |  | 2d | 2021-05-04 | 2021-05-05 |  | 2021-04-03 | 2021-04-05 | 2d | -6.12d | 0d | 梁泽生 | 16h | 1,020 | 谢子文 | 选题说明、往期文档会议记录 | 小组会议、与助教讨论、线上讨论 | 关联图 |
| 65 | 3.2.4 | 创建开发原型 |  | 3d | 2021-05-05 | 2021-05-10 |  | 2021-04-06 | 2021-04-08 | 3d | -8.5d | 0d | 彭昕怡 | 24h | 1,500 | 彭昕怡 | 选题说明、往期文档会议记录 | 小组会议、与助教讨论、线上讨论 | 开发模型 |
| 66 | 3.2.5 | 分析可行性 |  | 2d | 2021-05-04 | 2021-05-05 |  | 2021-04-09 | 2021-04-11 | 2d | -6.12d | 0d | 谢子文 | 16h | 1,020 | 梁泽生 | 选题说明、往期文档会议记录 | 小组会议、与助教讨论、线上讨论 | 可行性分析 |
| 67 | 3.2.6 | 确立优先级 |  | 2d | 2021-05-04 | 2021-05-05 |  | 2021-04-11 | 2021-04-12 | 2d | -6.12d | 0d | 张安硕 | 16h | 1,020 | 张安硕 | 选题说明、往期文档会议记录 | 小组会议、与助教讨论、线上讨论 | 优先级 |
| 68 | 3.2.7 | 创建需求模型 |  | 3d | 2021-05-04 | 2021-05-06 |  | 2021-04-12 | 2021-04-14 | 3d | -7.12d | 0d | 刘书宇 | 24h | 1,500 | 刘书宇 | 选题说明、往期文档会议记录 | 小组会议、与助教讨论、线上讨论 | 需求模型 |
| 69 | 3.2.8 | 编写数据字典 |  | 2d | 2021-05-06 | 2021-05-10 |  | 2021-04-13 | 2021-04-14 | 2d | -8.75d | 0d | 梁泽生 | 16h | 1,020 | 谢子文 | 选题说明、往期文档会议记录 | 小组会议、与助教讨论、线上讨论 | 数据字典 |
| 70 | 3.2.9 | 小组总结会议 |  | 1d | 2021-05-05 | 2021-05-05 |  | 2021-04-13 | 2021-04-13 | 1d | -6.12d | 0d | 所有人 | 8h | 2,700 | 彭昕怡 | 选题说明、往期文档 | 小组会议、与助教讨论、线上讨论 | 会议记录 |
| 71 | 3.2.10 | 需求分析阶段总结 | milestone | 0d | 2021-05-03 | 2021-05-03 |  | 2021-04-13 | 2021-04-13 | 0d | -4.12d | 0d |  |  |  |  |  |  |  |
| 72 | 3.3 | **需求规格说明** |  | 3d | 2021-05-11 | 2021-05-13 | 61 | 2021-04-05 | 2021-04-27 | 17d | -9.12d | 0d |  | 88h | 9,960 | 谢子文、张安硕、彭昕怡、梁泽生、刘书宇 |  |  |  |
| 73 | 3.3.1 | 小组研讨会议 |  | 1d | 2021-05-11 | 2021-05-11 |  | 2021-04-20 | 2021-04-20 | 1d | -7.12d | 0d | 所有人 | 8h | 2,700 | 张安硕 | 选题说明、往期文档 | 小组会议、与助教讨论、线上讨论 | 会议记录 |
| 74 | 3.3.2 | 指明需求来源 |  | 2d | 2021-05-11 | 2021-05-12 |  | 2021-04-16 | 2021-04-19 | 2d | -8.12d | 0d | 刘书宇 | 16h | 1,020 | 刘书宇 | 选题说明、往期文档会议记录 | 小组会议、与助教讨论、线上讨论 | 需求来源 |
| 75 | 3.3.3 | 记录业务规范 |  | 2d | 2021-05-11 | 2021-05-12 |  | 2021-04-19 | 2021-04-20 | 2d | -8.12d | 0d | 梁泽生 | 16h | 1,020 | 谢子文 | 选题说明、往期文档会议记录 | 小组会议、与助教讨论、线上讨论 | 业务规范 |
| 76 | 3.3.4 | 创建需求跟踪能力矩阵 |  | 3d | 2021-05-11 | 2021-05-13 |  | 2021-04-22 | 2021-04-26 | 3d | -9.12d | 0d | 彭昕怡 | 24h | 1,500 | 彭昕怡 | 选题说明、往期文档会议记录 | 小组会议、与助教讨论、线上讨论 | 需求跟踪能力矩阵 |
| 77 | 3.3.5 | 编写需求文档 |  | 2d | 2021-05-11 | 2021-05-12 | 58 | 2021-04-05 | 2021-04-06 | 2d | -8.12d | 0d | 谢子文 | 16h | 1,020 | 梁泽生 | 选题说明、往期文档会议记录 | 小组会议、与助教讨论、线上讨论 | 需求文档 |
| 78 | 3.3.6 | 小组总结会议 |  | 1d | 2021-05-12 | 2021-05-12 |  | 2021-04-20 | 2021-04-20 | 1d | -8.12d | 0d | 所有人 | 8h | 2,700 | 张安硕 | 选题说明、往期文档 | 小组会议、与助教讨论、线上讨论 | 会议记录 |
| 79 | 4 | **控制** |  | 14.12d | 2021-04-30 | 2021-05-20 | 34 | 2021-03-31 | 2021-06-01 | 45d | 0d |  |  | 154h | 16,260 | 谢子文、梁泽生、彭昕怡、张安硕、刘书宇 |  |  |  |
| 80 | 4.1 | **需求规格审核** |  | 4d | 2021-05-13 | 2021-05-19 | 72 | 2021-03-31 | 2021-05-12 | 31d | 11.25d | 0d |  | 104h | 11,040 | 谢子文、张安硕、彭昕怡、梁泽生、刘书宇 |  |  |  |
| 81 | 3.1.1 | 小组研讨会议 |  | 1d | 2021-05-14 | 2021-05-14 |  | 2021-05-04 | 2021-05-04 | 1d | 14.25d |  | 所有人 | 8h | 2,700 | 谢子文、梁泽生、彭昕怡、张安硕、刘书宇 | 选题说明、往期文档 | 小组会议、与助教讨论、线上讨论 | 会议记录 |
| 82 | 3.1.1 | 审查需求文档 |  | 2d | 2021-05-14 | 2021-05-17 | 77 | 2021-04-07 | 2021-04-08 | 2d | 13.25d |  | 梁泽生 | 16h | 1,020 | 谢子文 | 选题说明、往期文档会议记录 | 小组会议、与助教讨论、线上讨论 |  |
| 83 | 4.1.3 | 确定标准 |  | 1d | 2021-05-14 | 2021-05-14 |  | 2021-05-07 | 2021-05-07 | 1d | 14.25d |  | 彭昕怡 | 8h | 540 | 彭昕怡 | 选题说明、往期文档会议记录 | 小组会议、与助教讨论、线上讨论 | 标准 |
| 84 | 4.1.4 | 编写测试用例 |  | 2d | 2021-05-14 | 2021-05-17 |  | 2021-05-08 | 2021-05-10 | 2d | 13.25d |  | 谢子文 | 16h | 1,020 | 梁泽生 | 选题说明、往期文档会议记录 | 小组会议、与助教讨论、线上讨论 | 测试用例 |
| 85 | 4.1.5 | 编写用户手册 |  | 2d | 2021-05-14 | 2021-05-17 | 63 | 2021-03-31 | 2021-04-01 | 2d | 13.25d |  | 张安硕 | 16h | 1,020 | 张安硕 | 选题说明、往期文档会议记录 | 小组会议、与助教讨论、线上讨论 | 用户手册 |
| 86 | 4.1.6 | 修订更新过往文档 |  | 2d | 2021-05-14 | 2021-05-17 |  | 2021-05-11 | 2021-05-12 | 2d | 13.25d |  | 刘书宇 | 16h | 1,020 | 刘书宇 | 选题说明、往期文档会议记录 | 小组会议、与助教讨论、线上讨论 |  |
| 87 | 4.1.7 | 需求规格说明评审ppt制作 |  | 2d | 2021-05-18 | 2021-05-19 | 77 | 2021-04-07 | 2021-04-08 | 2d | 11.25d |  | 梁泽生 | 16h | 1,020 | 谢子文、梁泽生、彭昕怡、张安硕、刘书宇 | 选题说明、往期文档会议记录 | 小组会议、与助教讨论、线上讨论 | PPT |
| 88 | 4.1.8 | 小组总结会议 |  | 1d | 2021-05-17 | 2021-05-17 |  | 2021-05-11 | 2021-05-11 | 1d | 13.25d |  | 所有人 | 8h | 2,700 | 谢子文、张安硕、彭昕怡、梁泽生、刘书宇 | 选题说明、往期文档 | 小组会议、与助教讨论、线上讨论 | 会议记录 |
| 89 | 4.1.9 | 需求开发阶段总结 | milestone | 0d | 2021-05-13 | 2021-05-13 |  | 2021-05-12 | 2021-05-12 | 0d | 15.25d |  |  |  |  |  |  |  |  |

| ID | WBS | Task | Type | Duration | Start | Finish | Predecessors | Baseline start | Baseline finish | Baseline duration | Total slack | Free slack | Constraint | Resources | Work | Cost | 负责人 | 输入 | 工具与技术 | 输出 |
| --- | --- | --- | --- | --- | --- | --- | --- | --- | --- | --- | --- | --- | --- | --- | --- | --- | --- | --- | --- | --- |
| 90 | 3.2 | **需求管理过程** |  | 14.12d | 2021-04-30 | 2021-05-20 | 80 | 2021-05-14 | 2021-06-01 | 13d |  |  |  |  | 50h | 5,220 | 谢子文、张安硕、彭昕怡、梁泽生、刘书宇 |  |  |  |
| 91 | 4.2.1 | 小组研讨会议 |  | 0.25d | 2021-04-30 | 2021-05-03 |  | 2021-05-18 | 2021-05-18 | 1d | 27.88d |  |  | 所有人 | 2h | 900 | 谢子文、张安硕、彭昕怡、梁泽生、刘书宇 | 选题说明、往期文档会议记录 | 小组会议、与助教讨论、线上讨论 | 会议记录 |
| 92 | 4.2.2 | 配置使用需求管理工具 |  | 0.75d | 2021-04-30 | 2021-05-03 |  | 2021-05-14 | 2021-05-16 | 2d | 27.38d |  |  | 梁泽生 | 6h | 420 | 彭昕怡 | 选题说明、往期文档会议记录 | 小组会议、与助教讨论、线上讨论 | 配置管理 |
| 93 | 3.2.1 | 确定变更控制过程 |  | 0.5d | 2021-04-30 | 2021-05-03 |  | 2021-05-17 | 2021-05-18 | 2d | 24.38d | 0d |  | 彭昕怡 | 4h | 300 | 梁泽生 | 选题说明、往期文档会议记录 | 小组会议、与助教讨论、线上讨论 |  |
| 94 | 4.2.4 | 变更影响分析 |  | 0.5d | 2021-04-30 | 2021-05-03 |  | 2021-05-19 | 2021-05-20 | 2d | 24.62d | 0d |  | 谢子文 | 4h | 300 | 张安硕 | 选题说明、往期文档会议记录 | 小组会议、与助教讨论、线上讨论 | 分析结果 |
| 95 | 4.2.5 | 跟踪变更 |  | 0.5d | 2021-05-06 | 2021-05-06 |  | 2021-05-21 | 2021-05-22 | 2d | 24.5d |  |  | 张安硕 | 4h | 300 | 刘书宇 | 选题说明、往期文档会议记录 | 小组会议、与助教讨论、线上讨论 |  |
| 96 | 4.2.6 | 编写需求文档基准版本 |  | 0.5d | 2021-05-03 | 2021-05-03 | 93 | 2021-05-21 | 2021-05-24 | 2d | 24.38d | 0d |  | 彭昕怡 | 4h | 300 | 谢子文 | 选题说明、往期文档会议记录 | 小组会议、与助教讨论、线上讨论 | 需求文档基准 |
| 97 | 4.2.7 | 编写需求文档控制版本 |  | 0.5d | 2021-05-03 | 2021-05-06 | 96 | 2021-05-25 | 2021-05-26 | 2d | 24.38d |  |  | 梁泽生 | 4h | 300 | 彭昕怡 | 选题说明、往期文档会议记录 | 小组会议、与助教讨论、线上讨论 | 需求文档控制 |
| 98 | 4.2.8 | 维护变更历史记录 |  | 0.5d | 2021-05-03 | 2021-05-04 |  | 2021-05-27 | 2021-05-28 | 2d | 26.12d |  |  | 彭昕怡 | 4h | 300 | 梁泽生 | 选题说明、往期文档会议记录 | 小组会议、与助教讨论、线上讨论 | 历史记录 |
| 99 | 4.2.9 | 编写需求变更说明 |  | 0.5d | 2021-05-07 | 2021-05-07 | 94 | 2021-05-21 | 2021-05-24 | 2d | 23.5d |  |  | 张安硕 | 4h | 300 | 张安硕 | 选题说明、往期文档会议记录 | 小组会议、与助教讨论、线上讨论 | 需求变更说明 |
| 100 | 4.2.10 | 跟踪需求状态 |  | 0.5d | 2021-05-03 | 2021-05-06 |  | 2021-05-28 | 2021-05-31 | 2d | 24.75d |  |  | 梁泽生 | 4h | 300 | 刘书宇 | 选题说明、往期文档会议记录 | 小组会议、与助教讨论、线上讨论 | 需求状态 |
| 101 | 4.2.11 | 衡量需求稳定性 |  | 0.5d | 2021-05-04 | 2021-05-05 |  | 2021-05-31 | 2021-06-01 | 2d | 25.62d |  |  | 彭昕怡 | 4h | 300 | 谢子文 | 选题说明、往期文档会议记录 | 小组会议、与助教讨论、线上讨论 | 需求稳定性 |
| 102 | 4.2.12 | 编写需求变更评审PPT |  | 0.5d | 2021-05-06 | 2021-05-06 |  | 2021-05-30 | 2021-05-31 | 2d | 24d |  |  | 张安硕 | 4h | 300 | 彭昕怡 | 选题说明、往期文档会议记录 | 小组会议、与助教讨论、线上讨论 | PPT |
| 103 | 4.2.13 | 小组总结会议 |  | 0.25d | 2021-05-03 | 2021-05-03 |  | 2021-06-01 | 2021-06-01 | 1d | 27.62d |  |  | 所有人 | 2h | 900 | 谢子文、张安硕、彭昕怡、梁泽生、刘书宇 | 选题说明、往期文档 | 小组会议、与助教讨论、线上讨论 | 会议记录 |
| 104 | 4.2.14 | 需求管理阶段总结 | milestone | 0d | 2021-04-30 | 2021-04-30 |  | 2021-05-31 | 2021-05-31 | 0d | 28.12d |  |  |  |  |  |  |  |  |  |
| 105 | 5 | **收尾** |  | 16d | 2021-05-20 | 2021-06-10 | 79 | 2021-06-04 | 2021-06-10 | 5d |  |  |  |  | 12h | 2,400 | 谢子文、梁泽生、彭昕怡、张安硕、刘书宇 |  |  |  |
| 106 | 5 | **需求工程总结** |  | 14d | 2021-05-21 | 2021-06-10 | 90 | 2021-06-04 | 2021-06-10 | 5d | 1d |  |  |  | 12h | 2,400 | 谢子文、梁泽生、彭昕怡、张安硕、刘书宇 |  |  |  |
| 107 | 5.1.1 | 小组研讨会议 |  | 0.25d | 2021-05-21 | 2021-05-21 |  | 2021-06-04 | 2021-06-04 | 1d | 14.75d |  |  | 所有人 | 2h | 900 | 谢子文、梁泽生、彭昕怡、张安硕、刘书宇 | 选题说明、往期文档 | 小组会议、与助教讨论、线上讨论 | 会议记录 |
| 108 | 5.1.2 | 总结文档编写 |  | 0.75d | 2021-05-21 | 2021-05-21 |  | 2021-06-04 | 2021-06-08 | 3d | 14d | 3.25d |  | 彭昕怡 | 6h | 420 | 彭昕怡、张安硕、刘书宇 | 选题说明、往期文档会议记录 | 小组会议、与助教讨论、线上讨论 | 总结文档 |
| 109 | 5.1.3 | 总结ppt制作 |  | 0.25d | 2021-05-27 | 2021-05-27 | 108 | 2021-06-09 | 2021-06-09 | 1d | 10.75d |  | start no earlier than 2021-05-27 | 张安硕 | 2h | 180 | 谢子文、梁泽生 | 选题说明、往期文档会议记录 | 小组会议、与助教讨论、线上讨论 | 总结PPT |
| 110 | 5.1.4 | 闭幕仪式 |  | 0.25d | 2021-05-28 | 2021-05-28 |  | 2021-06-10 | 2021-06-10 | 1d | 9.75d |  | start no earlier than 2021-05-28 | 所有人 | 2h | 900 | 谢子文、梁泽生、彭昕怡、张安硕、刘书宇 | 选题说明、往期文档 | 小组会议、与助教讨论、线上讨论 | 会议记录 |
| 111 | 5.1.5 | 项目总结阶段 | milestone | 0d | 2021-06-10 | 2021-06-10 |  | 2021-06-10 | 2021-06-10 | 0d | 1d |  | start no earlier than 2021-06-10 |  |  |  |  |  |  |  |
| 112 | 4 | **翻转课堂** |  | 34d | 2021-03-18 | 2021-05-04 |  | 2021-03-18 | 2021-05-20 | 45.5d | 0d |  |  |  | 35h | 3,180 | 谢子文、梁泽生、彭昕怡、张安硕、刘书宇 |  |  |  |
| 113 | 6.1 | **UML概述翻转课堂** |  | 8.5d | 2021-03-18 | 2021-03-30 |  | 2021-03-18 | 2021-03-30 | 8.5d | 0d |  |  |  | 6h | 540 | 谢子文、梁泽生、彭昕怡、张安硕、刘书宇 |  |  |  |
| 114 | 6.1.1 | 学习翻转课堂内容 | manual | 2d | 2021-03-18 | 2021-03-19 |  | 2021-03-18 | 2021-03-19 | 2d |  |  |  | 刘书宇 | 2h | 180 | 谢子文 |  |  |  |
| 115 | 6.1.2 | 制作ppt并修改 | manual | 2d | 2021-03-23 | 2021-03-24 |  | 2021-03-23 | 2021-03-24 | 2d |  |  |  | 梁泽生 | 2h | 180 | 梁泽生 |  |  |  |
| 116 | 6.1.3 | 翻转课堂讲解 | manual | 0.5d | 2021-03-30 | 2021-03-30 |  | 2021-03-30 | 2021-03-30 | 0.5d |  |  |  | 彭昕怡 | 2h | 180 | 彭昕怡 |  |  |  |

| ID | WBS | Task | Type | Duration | Start | Finish | Predecessors | Baseline start | Baseline finish | Baseline duration | Resources | Work | Cost | 负责人 |
| --- | --- | --- | --- | --- | --- | --- | --- | --- | --- | --- | --- | --- | --- | --- |
| 117 | 6.2 | **UML工具翻转课堂** |  | 9d | 2021-03-25 | 2021-04-06 | 115 | 2021-03-25 | 2021-04-06 | 9d |  | 5h | 480 | 谢子文、梁泽生、彭昕怡、张安硕、刘书宇 |
| 118 | 6.2.1 | 学习翻转课堂内容 | manual | 2d | 2021-03-23 | 2021-03-24 |  | 2021-03-23 | 2021-03-24 | 2d | 张安硕 | 2h | 180 | 张安硕 |
| 119 | 6.2.2 | 制作ppt并修改 | manual | 2d | 2021-04-01 | 2021-04-02 |  | 2021-03-30 | 2021-03-31 | 2d | 梁泽生 | 1h | 120 | 刘书宇 |
| 120 | 6.2.3 | 翻转课堂讲解 | manual | 0.5d | 2021-04-09 | 2021-04-09 |  | 2021-04-06 | 2021-04-06 | 0.5d | 谢子文 | 2h | 180 | 谢子文 |
| 121 | 6.3 | **UML基础1翻转课堂** |  | 9d | 2021-04-01 | 2021-04-13 | 119 | 2021-04-01 | 2021-04-13 | 9d |  | 6h | 540 | 谢子文、梁泽生、彭昕怡、张安硕、刘书宇 |
| 122 | 6.3.1 | 学习翻转课堂内容 | manual | 2d | 2021-04-01 | 2021-04-02 |  | 2021-04-01 | 2021-04-02 | 2d | 梁泽生 | 2h | 180 | 梁泽生 |
| 123 | 6.3.2 | 制作ppt并修改 | manual | 1d | 2021-04-07 | 2021-04-07 |  | 2021-04-06 | 2021-04-07 | 2d | 彭昕怡 | 2h | 180 | 彭昕怡 |
| 124 | 6.3.3 | 翻转课堂讲解 | manual | 0.5d | 2021-04-13 | 2021-04-13 |  | 2021-04-13 | 2021-04-13 | 0.5d | 张安硕 | 2h | 180 | 张安硕 |
| 125 | 6.4 | **UML基础2翻转课堂** |  | 9d | 2021-04-08 | 2021-04-20 | 123 | 2021-04-08 | 2021-04-20 | 9d |  | 6h | 540 | 谢子文、梁泽生、彭昕怡、张安硕、刘书宇 |
| 126 | 6.4.1 | 学习翻转课堂内容 | manual | 2d | 2021-04-13 | 2021-04-14 |  | 2021-04-08 | 2021-04-09 | 2d | 刘书宇 | 2h | 180 | 刘书宇 |
| 127 | 6.4.2 | 制作ppt并修改 | manual | 2d | 2021-04-13 | 2021-04-14 |  | 2021-04-13 | 2021-04-14 | 2d | 谢子文 | 2h | 180 | 谢子文 |
| 128 | 6.4.3 | 翻转课堂讲解 | manual | 0.5d | 2021-04-20 | 2021-04-20 |  | 2021-04-20 | 2021-04-20 | 0.5d | 梁泽生 | 2h | 180 | 梁泽生 |
| 129 | 6.5 | **UML基础3翻转课堂** |  | 9d | 2021-04-15 | 2021-04-27 | 127 | 2021-04-15 | 2021-04-27 | 9d |  | 6h | 540 | 谢子文、梁泽生、彭昕怡、张安硕、刘书宇 |
| 130 | 6.5.1 | 学习翻转课堂内容 | manual | 2d | 2021-04-15 | 2021-04-16 |  | 2021-04-15 | 2021-04-16 | 2d | 彭昕怡 | 2h | 180 | 彭昕怡 |
| 131 | 6.5.2 | 制作ppt并修改 | manual | 2d | 2021-04-20 | 2021-04-21 |  | 2021-04-20 | 2021-04-21 | 2d | 张安硕 | 2h | 180 | 张安硕 |
| 132 | 6.5.3 | 翻转课堂讲解 | manual | 0.5d | 2021-04-28 | 2021-04-28 |  | 2021-04-27 | 2021-04-27 | 0.5d | 刘书宇 | 2h | 180 | 刘书宇 |
| 133 | 6.6 | **UML基础4翻转课堂** |  | 9d | 2021-04-22 | 2021-05-04 | 131 | 2021-04-22 | 2021-05-04 | 9d |  | 6h | 540 | 谢子文、梁泽生、彭昕怡、张安硕、刘书宇 |
| 134 | 6.6.1 | 学习翻转课堂内容 | manual | 2d | 2021-04-22 | 2021-04-23 |  | 2021-04-22 | 2021-04-23 | 2d | 谢子文 | 2h | 180 | 谢子文 |
| 135 | 6.6.2 | 制作ppt并修改 | manual | 2d | 2021-04-27 | 2021-04-28 |  | 2021-04-27 | 2021-04-28 | 2d | 梁泽生 | 2h | 180 | 梁泽生 |
| 136 | 6.6.3 | 翻转课堂讲解 | manual | 0.5d | 2021-05-04 | 2021-05-04 |  | 2021-05-04 | 2021-05-04 | 0.5d | 彭昕怡 | 2h | 180 | 彭昕怡 |
