# 社区团购开发

Schedule from MS Project, 2021-03-08 to 2021-06-28, 2 hours a day, costs in ¥, A marks actual dates.

## Calendars

- Standard: Mon-Fri 08:00-12:00, 13:00-17:00; Sat-Sun off. Exceptions (off unless hours are given): 2021-05-16 08:00-12:00, 13:00-17:00.

## Resources

| Resource | Rate | Cost per use |
| --- | --- | --- |
| 刘书宇 | 60 | 60 |
| 谢子文 | 60 | 60 |
| 梁泽生 | 60 | 60 |
| 彭昕怡 | 60 | 60 |
| 张安硕 | 60 | 60 |
| 所有人 | 300 | 300 |

## Schedule

| ID | WBS | Task | Duration | Start | Finish | Predecessors | Complete | Remaining | Actual start | Actual finish | Baseline start | Baseline finish | Baseline duration | Total slack | Constraint | Resources | Work | Actual work | Cost | Actual cost | 负责人 | 输入 | 工具与技术 | 输出 |
| --- | --- | --- | --- | --- | --- | --- | --- | --- | --- | --- | --- | --- | --- | --- | --- | --- | --- | --- | --- | --- | --- | --- | --- | --- |
| 1 | 1 | **启动** | 20d | 2021-03-08 A | 2021-03-12 |  | 100% |  |  | 2021-03-11 | 2021-03-08 | 2021-03-12 | 20d |  |  |  | 11h | 11h | 1,740 | 1,740 | 谢子文、梁泽生、彭昕怡、张安硕、刘书宇 |  |  |  |
| 2 | 1.1 | **前期准备** | 20d | 2021-03-08 A | 2021-03-12 |  | 100% |  |  | 2021-03-11 | 2021-03-08 | 2021-03-12 | 20d |  |  |  | 11h | 11h | 1,740 | 1,740 | 谢子文、梁泽生、彭昕怡、张安硕、刘书宇 |  |  |  |
| 3 | 1.1.1 | 项目启动会议 | 0.5d | 2021-03-10 A | 2021-03-10 A |  | 100% |  |  |  | 2021-03-08 | 2021-03-08 | 4d |  |  | 所有人 | 1h | 1h | 600 | 600 | 谢子文、梁泽生、彭昕怡、张安硕、刘书宇 | 选题说明、小组资产 | 小组会议、与助教讨论、线上讨论 | 会议记录 |
| 4 | 1.1.2 | 制定项目内容 | 0.5d | 2021-03-08 A | 2021-03-08 A |  | 100% |  |  |  | 2021-03-08 | 2021-03-09 | 8d |  |  | 刘书宇 | 1h | 1h | 120 | 120 | 谢子文、刘书宇 | 选题说明、小组资产 | 小组会议、与助教讨论、线上讨论 | 项目内容 |
| 5 | 1.1.3 | 确定项目方法 | 0.5d | 2021-03-08 A | 2021-03-08 A |  | 100% |  |  |  | 2021-03-09 | 2021-03-10 | 8d |  |  | 谢子文 | 1h | 1h | 120 | 120 | 彭昕怡 | 选题说明、小组资产 | 小组会议、与助教讨论、线上讨论 | 项目方法 |
| 6 | 1.1.4 | 同类型产品调研 | 0.25d | 2021-03-08 A | 2021-03-08 A | 4 | 100% |  |  |  | 2021-03-10 | 2021-03-11 | 8d |  | finish no earlier than 2020-10-03 | 彭昕怡; 张安硕 | 1h | 1h | 180 | 180 | 彭昕怡、张安硕 | 选题说明、小组资产 | 小组会议、与助教讨论、线上讨论 | 产品调研 |
| 7 | 1.1.5 | 各项配置和约定 | 0.5d | 2021-03-09 A | 2021-03-09 A | 5 | 100% |  |  |  | 2021-03-11 | 2021-03-11 | 4d |  |  | 梁泽生 | 1h | 1h | 120 | 120 | 梁泽生 | 选题说明、小组资产 | 小组会议、与助教讨论、线上讨论 |  |
| 8 | 1.1.6 | **知识技能学习** | 20d | 2021-03-08 | 2021-03-12 |  | 100% |  | 2021-03-09 | 2021-03-11 | 2021-03-08 | 2021-03-12 | 20d |  |  |  | 5h | 5h |  |  | 谢子文、梁泽生、彭昕怡、张安硕、刘书宇 |  |  |  |
| 9 | 1.1.6.1 | **APP基础知识学习** | 12d | 2021-03-08 | 2021-03-10 |  | 100% |  | 2021-03-09 | 2021-03-09 | 2021-03-08 | 2021-03-10 | 12d |  |  |  | 2h | 2h |  |  | 刘书宇 |  |  |  |
| 10 | 1.1.6.1.1 | APP基础知识学习第一阶段 | 4d | 2021-03-09 A | 2021-03-09 A |  | 100% |  |  |  | 2021-03-09 | 2021-03-10 | 8d |  | finish no earlier than 2021-03-10 |  | 1h | 1h |  |  | 刘书宇 |  |  |  |
| 11 | 1.1.6.1.2 | APP基础知识学习第二阶段 | 4d | 2021-03-09 A | 2021-03-09 A |  | 100% |  |  |  | 2021-03-09 | 2021-03-10 | 8d |  | finish no earlier than 2021-03-10 |  | 1h | 1h |  |  | 刘书宇 |  |  |  |
| 12 | 1.1.6.2 | **原型设计学习** | 16d | 2021-03-09 | 2021-03-12 |  | 100% |  | 2021-03-10 | 2021-03-11 | 2021-03-09 | 2021-03-12 | 16d |  |  |  | 2h | 2h |  |  | 张安硕、彭昕怡 |  |  |  |
| 13 | 1.1.6.2.1 | 原型设计学习第一阶段 | 6d | 2021-03-10 A | 2021-03-11 A |  | 100% |  |  |  | 2021-03-10 | 2021-03-12 | 12d |  | finish no earlier than 2021-03-12 |  | 1h | 1h |  |  | 张安硕、彭昕怡 |  |  |  |
| 14 | 1.1.6.2.2 | 原型设计学习第二阶段 | 4d | 2021-03-11 A | 2021-03-11 A |  | 100% |  |  |  | 2021-03-11 | 2021-03-12 | 8d |  | finish no earlier than 2021-03-12 |  | 1h | 1h |  |  | 张安硕、彭昕怡 |  |  |  |
| 15 | 1.1.6.3 | **课程书籍阅读学习** | 12d | 2021-03-10 | 2021-03-12 |  | 100% |  | 2021-03-11 | 2021-03-11 | 2021-03-10 | 2021-03-12 | 12d |  |  |  | 1h | 1h |  |  | 谢子文、梁泽生、彭昕怡、张安硕、刘书宇 |  |  |  |
| 16 | 1.1.6.3.1 | 课程书籍阅读学习 | 4d | 2021-03-11 A | 2021-03-11 A |  | 100% |  |  |  | 2021-03-11 | 2021-03-12 | 8d |  | finish no earlier than 2021-03-12 |  | 1h | 1h |  |  | 谢子文、梁泽生、彭昕怡、张安硕、刘书宇 |  |  |  |
| 17 | 1.1.7 | 小组总结会议 | 0.5d | 2021-03-08 A | 2021-03-08 A |  | 100% |  |  |  | 2021-03-11 | 2021-03-12 | 8d |  | start no earlier than 2021-03-08 | 所有人 | 1h | 1h | 600 | 600 | 谢子文、梁泽生、彭昕怡、张安硕、刘书宇 | 选题说明、小组资产 | 小组会议、与助教讨论、线上讨论 | 会议记录 |
| 18 | 2 | **计划** | 32.25d | 2021-03-15 A | 2021-03-25 | 1 | 98% | 0.56d |  |  | 2021-03-12 | 2021-03-25 | 40d | 0d |  |  | 12h | 11.8h | 3,420 | 3,408 | 谢子文、梁泽生、彭昕怡、张安硕、刘书宇 |  |  |  |
| 19 | 2.1 | **项目计划设计** | 3d | 2021-03-15 A | 2021-03-15 A | 2 | 100% |  |  |  | 2021-03-12 | 2021-03-18 | 20d |  |  |  | 6h | 6h | 1,740 | 1,740 | 谢子文、梁泽生、彭昕怡、张安硕、刘书宇 |  |  |  |
| 20 | 2.1.1 | 小组研讨会议 | 0.5d | 2021-03-15 A | 2021-03-15 A |  | 100% |  |  |  | 2021-03-12 | 2021-03-12 | 0.4d |  |  | 所有人 | 1h | 1h | 600 | 600 | 谢子文、梁泽生、彭昕怡、张安硕、刘书宇 | 选题说明、往期文档 | 小组会议、与助教讨论、线上讨论 | 会议记录 |
| 21 | 2.1.2 | 项目计划书制订 | 0.5d | 2021-03-15 A | 2021-03-15 A |  | 100% |  |  |  | 2021-03-15 | 2021-03-15 | 4d |  | start no earlier than 2021-03-14 | 刘书宇 | 1h | 1h | 120 | 120 | 彭昕怡 | 选题说明、往期文档会议记录 | 小组会议、与助教讨论、线上讨论 | 项目计划书 |
| 22 | 2.1.3 | 项目章程制订 | 0.5d | 2021-03-15 A | 2021-03-15 A |  | 100% |  |  |  | 2021-03-15 | 2021-03-15 | 2d |  | finish no earlier than 2021-03-14 | 梁泽生 | 1h | 1h | 120 | 120 | 梁泽生 | 选题说明、往期文档会议记录 | 小组会议、与助教讨论、线上讨论 | 项目章程 |
| 23 | 2.1.4 | 项目计划ppt制作 | 0.25d | 2021-03-15 A | 2021-03-15 A | 21 | 100% |  |  |  | 2021-03-16 | 2021-03-17 | 4d |  | start no earlier than 2021-03-13 | 彭昕怡; 张安硕 | 1h | 1h | 180 | 180 | 张安硕 | 选题说明、往期文档会议记录 | 小组会议、与助教讨论、线上讨论 | 项目计划PPT |
| 24 | 2.1.5 | 项目ppt修改 | 0.5d | 2021-03-15 A | 2021-03-15 A | 23 | 100% |  |  |  | 2021-03-18 | 2021-03-18 | 4d |  | start no earlier than 2021-03-14 | 谢子文 | 1h | 1h | 120 | 120 | 彭昕怡、张安硕、刘书宇 | 选题说明、往期文档会议记录 | 小组会议、与助教讨论、线上讨论 | 修改后的项目计划PPT |
| 25 | 2.1.6 | 小组总结会议 | 0.5d | 2021-03-15 A | 2021-03-15 A |  | 100% |  |  |  | 2021-03-18 | 2021-03-18 | 4d |  |  | 所有人 | 1h | 1h | 600 | 600 | 谢子文、梁泽生、彭昕怡、张安硕、刘书宇 | 选题说明、往期文档 | 小组会议、与助教讨论、线上讨论 | 会议记录 |

| ID | WBS | Task | Type | Duration | Start | Finish | Predecessors | Complete | Remaining | Baseline start | Baseline finish | Baseline duration | Total slack | Free slack | Constraint | Resources | Work | Actual work | Cost | Actual cost | 负责人 | 输入 | 工具与技术 | 输出 |
| --- | --- | --- | --- | --- | --- | --- | --- | --- | --- | --- | --- | --- | --- | --- | --- | --- | --- | --- | --- | --- | --- | --- | --- | --- |
| 26 | 2.2 | **可行性分析** |  | 28d | 2021-03-16 A | 2021-03-25 | 19 | 97% | 0.93d | 2021-03-13 | 2021-03-23 | 28d | 0d |  |  |  | 6h | 5.8h | 1,680 | 1,668 | 谢子文、梁泽生、彭昕怡、张安硕、刘书宇 |  |  |  |
| 27 | 2.2.1 | 小组研讨会议 |  | 0.5d | 2021-03-16 A | 2021-03-16 A |  | 100% |  | 2021-03-13 | 2021-03-13 | 4d |  |  |  | 所有人 | 1h | 1h | 600 | 600 | 谢子文、梁泽生、彭昕怡、张安硕、刘书宇 | 选题说明、往期文档 | 小组会议、与助教讨论、线上讨论 | 会议记录 |
| 28 | 2.2.2 | 可行性分析 |  | 0.5d | 2021-03-16 A | 2021-03-16 A |  | 100% |  | 2021-03-13 | 2021-03-14 | 8d |  |  |  | 梁泽生 | 1h | 1h | 120 | 120 | 谢子文 | 选题说明、往期文档会议记录 | 小组会议、与助教讨论、线上讨论 | 可行性分析思考 |
| 29 | 2.2.3 | 可行性分析报告编写 | milestone | 0.5d | 2021-03-18 A | 2021-03-18 A | 28 | 100% |  | 2021-03-17 | 2021-03-19 | 8d |  |  |  | 彭昕怡 | 1h | 1h | 120 | 120 | 谢子文 | 选题说明、往期文档会议记录 | 小组会议、与助教讨论、线上讨论 | 可行性分析报告 |
| 30 | 2.2.4 | 知识技能学习 |  | 0.5d | 2021-03-16 A | 2021-03-16 |  | 80% | 0.1d | 2021-03-16 | 2021-03-16 | 0.4d | 27.25d |  |  | 谢子文 | 1h | 0.8h | 120 | 108 | 谢子文、梁泽生、彭昕怡、张安硕、刘书宇 | 选题说明、往期文档会议记录 | 小组会议、与助教讨论、线上讨论 |  |
| 31 | 2.2.5 | 可行性分析报告的修改 |  | 0.5d | 2021-03-23 A | 2021-03-25 A | 29 | 100% |  | 2021-03-22 | 2021-03-23 | 8d |  |  | start no earlier than 2021-03-12 | 张安硕 | 1h | 1h | 120 | 120 | 谢子文、梁泽生 | 选题说明、往期文档会议记录 | 小组会议、与助教讨论、线上讨论 | 修改后的可行性分析报告 |
| 32 | 2.2.6 | 小组总结会议 |  | 0.5d | 2021-03-16 A | 2021-03-17 A |  | 100% |  | 2021-03-18 | 2021-03-18 | 0.4d |  |  |  | 所有人 | 1h | 1h | 600 | 600 | 谢子文、梁泽生、彭昕怡、张安硕、刘书宇 | 选题说明、往期文档 | 小组会议、与助教讨论、线上讨论 | 会议记录 |
| 33 | 2.2.7 | 项目计划阶段评审 | milestone | 0d | 2021-03-25 A | 2021-03-25 A |  | 100% |  | 2021-03-18 | 2021-03-18 | 0d |  |  | start no earlier than 2021-03-25 |  |  |  |  |  |  |  |  |  |
| 34 | 3 | **执行** |  | 148d? | 2021-03-25 A | 2021-05-14 | 18 | 2% | 144.91d? | 2021-03-25 | 2021-04-27 | 96d | 0d |  |  |  | 63h | 11.8h | 19,200 | 4,020 | 谢子文、梁泽生、彭昕怡、张安硕、刘书宇 |  |  |  |
| 35 | 3.1 | **需求获取** |  | 108d | 2021-03-25 A | 2021-04-30 | 19 | 3% | 104.74d | 2021-03-25 | 2021-04-02 | 28d | 4d | 0d |  |  | 48h | 11.8h | 15,540 | 4,020 | 谢子文、张安硕、彭昕怡、梁泽生、刘书宇 |  |  |  |
| 36 | 3.1.1 | 小组研讨会议 |  | 0.5d | 2021-03-25 A | 2021-03-25 A |  | 100% |  | 2021-03-25 | 2021-03-25 | 4d |  |  | finish no earlier than 2021-03-25 | 所有人 | 1h | 1h | 600 | 600 | 谢子文、张安硕、彭昕怡、梁泽生、刘书宇 | 选题说明、往期文档 | 小组会议、与助教讨论、线上讨论 | 会议记录 |
| 37 | 3.1.2 | 往期文档的修订 | manual | 0.46d | 2021-03-29 A | 2021-03-29 A |  | 100% |  |  |  |  |  |  |  | 梁泽生; 彭昕怡; 张安硕 | 1h | 1h | 240 | 240 |  | 往期文档 | 小组讨论、线上讨论 | 修订后的文档 |
| 38 | 3.1.3 | UE学习通读 | manual | 0.5d | 2021-03-27 A | 2021-03-27 A |  | 100% |  | 2021-03-26 | 2021-03-28 | 8d |  |  | start no earlier than 2021-03-27 | 所有人 | 1h | 1h | 600 | 600 | 彭昕怡 | 侯老师的课件 | 自行学习 | 完成效果 |
| 39 | 3.1.4 | UE学习第2阶段 | manual | 0.5d | 2021-03-31 A | 2021-03-31 A |  | 100% |  |  |  |  |  |  |  | 所有人 | 1h | 1h | 600 | 600 |  | 侯老师的课件 | 自行学习 | 完成效果 |
| 40 | 3.1.5 | 采访愿景 | manual | 0.5d | 2021-04-02 A | 2021-04-02 A |  | 100% |  |  |  |  |  |  |  | 所有人 | 1h | 1h | 600 | 600 |  | UE学习成果 | 与助教线上讨论 | 愿景分析 |
| 41 | 3.1.6 | 编写项目视图与范围 |  | 0.25d | 2021-04-02 A | 2021-04-02 A |  | 100% |  | 2021-03-27 | 2021-03-29 | 8d |  |  |  | 彭昕怡; 张安硕 | 1h | 1h | 180 | 180 | 梁泽生 | 选题说明、往期文档会议记录 | 小组会议、与助教讨论、线上讨论 | 愿景与范围文档 |
| 42 | 3.1.7 | 用户群分类 |  | 0.5d | 2021-04-05 A | 2021-04-05 A |  | 100% |  |  |  |  |  |  | finish no earlier than 2021-04-06 | 刘书宇 | 1h | 1h | 120 | 120 |  | 项目计划 | 小组讨论 | 用户群分类文档 |
| 43 | 3.1.8 | 项目需求获取计划初稿 | manual | 0.5d | 2021-04-05 A | 2021-04-05 A |  | 100% |  |  |  |  |  |  |  | 梁泽生 | 1h | 1h | 120 | 120 |  | 课本内容、选题说明 | 小组讨论 | 项目需求获取计划草稿 |
| 44 | 3.1.9 | 用户代表分析 | manual | 0.5d | 2021-04-05 A | 2021-04-05 A |  | 100% |  |  |  |  |  |  |  | 谢子文 | 1h | 1h | 120 | 120 |  | 课本内容、选题说明 | 小组讨论 | 用户代表分析初稿 |
| 45 | 3.1.10 | 小组商讨会议 | manual | 0.5d | 2021-04-06 A | 2021-04-06 |  | 80% | 0.1d |  |  |  |  |  |  | 所有人 | 1h | 0.8h | 600 | 540 |  | 各自的工作成果 | 小组讨论、和助教沟通 | 会议记录 |
| 46 | 3.1.11 | 愿景范围文档审核和修订 | manual | 0.5d | 2021-04-07 A | 2021-04-07 A |  | 100% |  |  |  |  |  |  |  | 刘书宇; 彭昕怡 | 1h | 1h | 180 | 180 |  | 愿景与范围文档初稿 | 与编写者交流 | 愿景与范围文档修订版 |
| 47 | 3.1.12 | 用户群分类文档审核和修订 | manual | 0.5d | 2021-04-07 A | 2021-04-07 A |  | 100% |  |  |  |  |  |  |  | 张安硕 | 1h | 1h | 120 | 120 |  | 用户群分类文档初稿 | 与编写者交流 | 用户群分类文档修订版 |
| 48 | 3.1.13 | 用户代表分析文档审核和修订 | manual | 8d | 2021-04-07 | 2021-04-08 |  |  |  |  |  |  |  |  |  | 梁泽生; 谢子文 | 1h |  | 180 |  |  | 用户代表分析初稿 | 与编写者交流 | 用户代表分析修订版 |
| 49 | 3.1.14 | 小组商讨会议 | manual | 0.4d | 2021-04-08 | 2021-04-08 |  |  |  |  |  |  |  |  |  | 所有人 | 1h |  | 600 |  |  | 各自的工作成果 | 小组讨论、和助教沟通 | 会议记录 |
| 50 | 3.1.15 | 确定使用实例 |  | 0.5d | 2021-04-09 | 2021-04-09 |  |  |  | 2021-03-28 | 2021-03-29 | 8d | 67.5d |  | start no earlier than 2021-04-09 | 张安硕 | 1h |  | 120 |  | 谢子文 | 选题说明、往期文档会议记录 | 小组会议、与助教讨论、线上讨论 | 实例 |
| 51 | 3.1.16 | 分析用户工作流程 | manual | 8d | 2021-04-09 | 2021-04-12 | 48 |  |  | 2021-03-29 | 2021-03-30 | 8d |  |  | start no earlier than 2021-04-09 | 刘书宇 | 1h |  | 120 |  | 彭昕怡 | 选题说明、往期文档会议记录 | 小组会议、与助教讨论、线上讨论 | 用户工作流程 |
| 52 | 3.1.17 | 团员A访谈 | manual | 4d | 2021-04-12 | 2021-04-12 |  |  |  |  |  |  |  |  |  | 张安硕 | 1h |  | 120 |  | 张安硕 | 选题说明、往期文档会议记录 | 小组会议 | 团员A访谈记录 |
| 53 | 3.1.18 | 管理员A访谈 | manual | 4d | 2021-04-12 | 2021-04-12 |  |  |  |  |  |  |  |  |  | 彭昕怡 | 1h |  | 120 |  | 彭昕怡 | 选题说明、往期文档会议记录 | 小组会议、与助教讨论、线上讨论 | 管理员A访谈 |
| 54 | 3.1.19 | 用户代表邀请函文档 | manual | 8d | 2021-04-12 | 2021-04-13 |  |  |  |  |  |  |  |  |  | 梁泽生 | 1h |  | 120 |  |  | 选题说明、往期文档会议记录 | Microsoft Word | 用户代表邀请函文档 |
| 55 | 3.1.20 | 约谈杨枨老师审核愿景 | manual | 4d | 2021-04-13 | 2021-04-13 |  |  |  |  |  |  |  |  |  | 所有人 | 1h |  | 600 |  |  | 选题说明、往期文档会议记录 | 与老师交流 | 约谈记录 |
| 56 | 3.1.21 | 助教约谈 | manual | 4d | 2021-04-13 | 2021-04-13 |  |  |  |  |  |  |  |  |  | 所有人 | 1h |  | 600 |  |  | 选题说明、往期文档会议记录 | 与助教交流 | 约谈记录 |
| 57 | 3.1.22 | 小组会议 | manual | 4d | 2021-04-14 | 2021-04-14 | 56 |  |  |  |  |  |  |  |  | 所有人 | 1h |  | 600 |  |  | 助教约谈记录 | 会议形式 | 会议记录 |
| 58 | 3.1.23 | 分发调查问卷 | manual | 8d | 2021-04-13 | 2021-04-14 |  |  |  |  |  |  |  |  |  | 所有人 | 1h |  | 600 |  |  | 选题说明、往期文档会议记录 | 问卷星 | 调查问卷结果 |
| 59 | 3.1.24 | 愿景文档修改 | manual | 8d | 2021-04-13 | 2021-04-14 |  |  |  |  |  |  |  |  |  | 彭昕怡; 张安硕 | 1h |  | 180 |  |  | 小组会议记录 | Microsoft Word | 修改后的愿景文档 |
| 60 | 3.1.25 | 团长访谈会议 | manual | 4d | 2021-04-14 | 2021-04-14 |  |  |  |  |  |  |  |  |  | 所有人 | 1h |  | 600 |  |  | 选题说明、往期文档会议记录 | 会议形式 | 访谈记录 |
| 61 | 3.1.26 | 小组会议 | manual | 4d | 2021-04-15 | 2021-04-15 | 60 |  |  |  |  |  |  |  |  | 所有人 | 1h |  | 600 |  |  | 团长访谈记录 | 会议形式 | 会议记录 |
| 62 | 3.1.27 | 用户群分类文修改 | manual | 8d | 2021-04-12 | 2021-04-13 | 47 |  |  |  |  |  |  |  |  | 刘书宇 | 1h |  | 120 |  |  | 小组会议记录 | Microsoft Word | 用户群分类文档 |
| 63 | 3.1.28 | 用户代表确认文档修改 | manual | 8d | 2021-04-14 | 2021-04-15 | 48, 62 |  |  |  |  |  |  |  |  | 谢子文 | 1h |  | 120 |  |  | 小组会议记录 | Microsoft Word | 用户代表确认文档 |
| 64 | 3.1.29 | 游客A访谈 | manual | 4d | 2021-04-15 | 2021-04-15 | 62 |  |  |  |  |  |  |  |  | 梁泽生 | 1h |  | 120 |  |  | 选题说明、往期文档会议记录 | Microsoft Word | 游客A访谈记录 |
| 65 | 3.1.30 | 团员B访谈 | manual | 4d | 2021-04-16 | 2021-04-16 | 61, 62, 63 |  |  |  |  |  |  |  |  | 刘书宇 | 1h |  | 120 |  |  | 选题说明、往期文档会议记录 | Microsoft Word | 团员B访谈记录 |
| 66 | 3.1.31 | 团员C访谈 | manual | 4d | 2021-04-16 | 2021-04-16 | 61, 62, 63 |  |  |  |  |  |  |  |  | 所有人 | 1h |  | 600 |  |  | 选题说明、往期文档会议记录 | Microsoft Word | 团员C访谈记录 |
| 67 | 3.1.32 | 写“HMW”便签 | manual | 8d | 2021-04-15 | 2021-04-16 |  |  |  |  |  |  |  |  |  | 所有人 | 1h |  | 600 |  |  | 小组会议记录 | 纸笔 | HMW便签 |
| 68 | 3.1.33 | 确定目标 | manual | 4d | 2021-04-16 | 2021-04-16 |  |  |  |  |  |  |  |  |  | 所有人 | 1h |  | 600 |  |  | HMW便签 | 会议形式 | 中心之路 |
| 69 | 3.1.34 | 确定质量属性 |  | 0.5d | 2021-04-20 | 2021-04-20 |  |  |  | 2021-03-30 | 2021-03-31 | 8d | 36d |  | finish no earlier than 2021-04-20 | 彭昕怡 | 1h |  | 120 |  | 张安硕 | 选题说明、往期文档会议记录 | 小组会议、与助教讨论、线上讨论 | 质量属性 |
| 70 | 3.1.35 | 查找原型设计资料 | manual | 8d | 2021-04-16 | 2021-04-19 |  |  |  |  |  |  |  |  |  | 彭昕怡 | 1h |  | 120 |  |  | 愿景范围文档、会议记录 | 网上查找、小组讨论 | 原型设计模板和设计意见 |
| 71 | 3.1.36 | 纸模型第一阶段 |  | 0.5d | 2021-04-20 | 2021-04-20 |  |  |  | 2021-03-27 | 2021-03-28 | 8d | 35.5d | 8d | finish no earlier than 2021-04-20 | 谢子文 | 1h |  | 120 |  | 刘书宇 | 选题说明、往期文档会议记录 | 小组会议、与助教讨论、线上讨论 | 用户群和用户代表 |
| 72 | 3.1.37 | 纸模型团体讨论 | manual | 8d | 2021-04-20 | 2021-04-21 |  |  |  |  |  |  |  |  |  | 所有人 | 1h |  | 600 |  |  | 原型设计 | 与助教商讨 | 原型的修改意见 |
| 73 | 3.1.38 | 用户访谈A纸模型 | manual | 4d | 2021-04-22 | 2021-04-22 |  |  |  |  |  |  |  |  |  | 张安硕 | 1h |  | 120 |  |  | 选题说明纸模型 | 用户访谈 | 用户需求记录 |
| 74 | 3.1.39 | 用户访谈B纸模型 |  | 0.5d | 2021-04-23 | 2021-04-23 | 71, 38 |  |  | 2021-03-29 | 2021-03-31 | 12d | 27.5d |  | start no earlier than 2021-04-23 | 梁泽生 | 1h |  | 120 |  | 梁泽生 | 选题说明纸模型 | 用户访谈 | 用户需求记录 |
| 75 | 3.1.40 | 用户访谈C纸模型 | manual | 4d | 2021-04-23 | 2021-04-23 |  |  |  |  |  |  |  |  |  | 刘书宇 | 1h |  | 120 |  |  | 选题说明纸模型 | 用户访谈 | 用户需求记录 |
| 76 | 3.1.41 | 纸模型团体讨论 | manual | 4d | 2021-04-23 | 2021-04-23 |  |  |  |  |  |  |  |  |  | 所有人 | 1h |  | 600 |  |  | 选题说明纸模型 | 小组讨论 | 修改后的纸模型 |
| 77 | 3.1.42 | 原型设计讨论 | manual | 8d | 2021-04-26 | 2021-04-27 |  |  |  |  |  |  |  |  |  | 所有人 | 1h |  | 600 |  |  | 选题说明纸模型 | 小组讨论 | 每个人原型设计想法 |
| 78 | 3.1.43 | 原型设计第一阶段 | manual | 12d | 2021-04-27 | 2021-04-29 |  |  |  |  |  |  |  |  |  | 谢子文; 张安硕 | 1h |  | 180 |  |  | 原型设计、修改意见 | 小组讨论 | 修改后的原型 |
| 79 | 3.1.44 | 纸模型修改 | manual | 5.42d | 2021-04-27 | 2021-04-28 |  |  |  |  |  |  |  |  |  | 梁泽生 | 1h |  | 120 |  |  | 选题说明纸模型 | 小组讨论 | 修改后的纸模型 |
| 80 | 3.1.45 | 用例文档初稿 | manual | 8d | 2021-04-28 | 2021-04-29 |  |  |  |  |  |  |  |  |  | 刘书宇; 彭昕怡 | 1h |  | 180 |  |  | 选题说明纸模型 | 小组讨论 | 用例文档初稿 |
| 81 | 3.1.46 | 用户访谈 老板 纸模型需求 | manual | 4d | 2021-04-30 | 2021-04-30 |  |  |  |  |  |  |  |  |  | 刘书宇; 彭昕怡; 谢子文; 梁泽生 | 1h |  | 300 |  |  | 选题说明纸模型 | 用户访谈 | 访谈文档 |
| 82 | 3.1.47 | 总结用户需求为报告 | manual | 4d | 2021-04-30 | 2021-04-30 |  |  |  | 2021-04-01 | 2021-04-02 | 8d |  |  |  | 张安硕 | 1h |  | 120 |  | 刘书宇 | 选题说明、往期文档会议记录 | 小组会议、与助教讨论、线上讨论 | 用户需求报告 |
| 83 | 3.1.48 | 小组总结会议 |  | 0.5d | 2021-04-29 | 2021-04-29 |  |  |  | 2021-04-01 | 2021-04-01 | 4d | 11.5d |  | start no earlier than 2021-04-29 | 所有人 | 1h |  | 600 |  | 谢子文、张安硕、彭昕怡、梁泽生、刘书宇 | 选题说明、往期文档 | 小组会议、与助教讨论、线上讨论 | 会议记录 |
| 84 | 3.1.49 | 需求获取阶段总结 | milestone | 0d | 2021-04-29 | 2021-04-29 |  |  |  | 2021-04-01 | 2021-04-01 | 0d | 12d |  | start no earlier than 2021-04-29 |  |  |  |  |  |  |  |  |  |

| ID | WBS | Task | Type | Duration | Start | Finish | Predecessors | Baseline start | Baseline finish | Baseline duration | Total slack | Free slack | Constraint | Resources | Work | Cost | 负责人 | 输入 | 工具与技术 | 输出 |
| --- | --- | --- | --- | --- | --- | --- | --- | --- | --- | --- | --- | --- | --- | --- | --- | --- | --- | --- | --- | --- |
| 85 | 3.2 | **需求分析** |  | 24d | 2021-05-03 | 2021-05-10 | 35 | 2021-03-29 | 2021-04-14 | 52d | 0d |  |  |  | 9h | 2,280 | 谢子文、张安硕、彭昕怡、梁泽生、刘书宇 |  |  |  |
| 86 | 3.2.1 | 小组研讨会议 |  | 0.5d | 2021-05-03 | 2021-05-03 |  | 2021-04-06 | 2021-04-06 | 4d | 7.5d |  |  | 所有人 | 1h | 600 | 谢子文、张安硕、彭昕怡、梁泽生、刘书宇 | 选题说明、往期文档 | 小组会议、与助教讨论、线上讨论 | 会议记录 |
| 87 | 3.2.2 | 原型设计第二阶段 |  | 0.25d | 2021-05-03 | 2021-05-03 | 38 | 2021-03-29 | 2021-03-30 | 8d | 7.75d |  |  | 刘书宇; 谢子文 | 1h | 180 | 张安硕、刘书宇 | 选题说明、往期文档会议记录 | 小组会议、与助教讨论、线上讨论 | 高保真原型一稿 |
| 88 | 3.2.3 | 用例文档二版 | manual | 8d | 2021-05-04 | 2021-05-05 |  |  |  |  |  |  |  | 彭昕怡; 张安硕 | 1h | 180 |  | 用例文档初稿 | 小组会议，和助教讨论 | 用例文档二稿 |
| 89 | 3.2.4 | 用例文档修改 | manual | 8d | 2021-05-06 | 2021-05-07 |  |  |  |  |  |  |  | 彭昕怡; 张安硕 | 1h | 180 |  | 用例文档二稿 | 小组会议，和助教讨论 | 用例文档三稿 |
| 90 | 3.2.5 | 原型设计修改 | manual | 12d | 2021-05-05 | 2021-05-07 |  |  |  |  |  |  |  | 刘书宇; 谢子文 | 1h | 180 |  | 选题说明、往期文档会议记录 | 小组会议、与助教讨论、线上讨论 | 高保真原型二稿 |
| 91 | 3.2.6 | 编写数据字典 |  | 0.5d | 2021-05-06 | 2021-05-06 |  | 2021-04-13 | 2021-04-14 | 8d | -8d | 0d | finish no earlier than 2021-05-06 | 梁泽生 | 1h | 120 | 谢子文 | 选题说明、往期文档会议记录 | 小组会议、与助教讨论、线上讨论 | 数据字典 |
| 92 | 3.2.7 | 绘制ER |  | 0.5d | 2021-05-03 | 2021-05-03 |  | 2021-04-03 | 2021-04-05 | 8d | 7.5d |  |  | 梁泽生 | 1h | 120 | 谢子文 | 选题说明、往期文档会议记录 | 小组会议、与助教讨论、线上讨论 | 关联图 |
| 93 | 3.2.8 | 小组总结会议 |  | 0.5d | 2021-05-06 | 2021-05-06 |  | 2021-04-13 | 2021-04-13 | 4d | -4.5d | 0d | start no earlier than 2021-05-06 | 所有人 | 1h | 600 | 彭昕怡 | 选题说明、往期文档 | 小组会议、与助教讨论、线上讨论 | 会议记录 |
| 94 | 3.2.9 | 编写优先级文档 | manual | 4d | 2021-05-10 | 2021-05-10 |  |  |  |  |  |  |  | 刘书宇 | 1h | 120 |  | 选题说明、往期文档 | 小组会议、与助教讨论、线上讨论 | 优先级文档 |
| 95 | 3.2.10 | 需求分析阶段总结 | milestone | 0d | 2021-05-06 | 2021-05-06 |  | 2021-04-13 | 2021-04-13 | 0d | -4d | 0d | start no earlier than 2021-05-06 |  |  |  |  |  |  |  |
| 96 | 3.3 | **需求规格说明** |  | 24d? | 2021-05-07 | 2021-05-14 | 85 | 2021-04-05 | 2021-04-27 | 68d |  |  |  |  | 6h | 1,380 | 谢子文、张安硕、彭昕怡、梁泽生、刘书宇 |  |  |  |
| 97 | 3.3.1 | 用例文档模板+初版 | milestone, manual | 0d | 2021-05-05 | 2021-05-05 |  |  |  |  |  |  |  | 刘书宇 |  | 60 |  | 选题说明、往期文档 | 小组会议、与助教讨论、线上讨论 | 用例文档初版 |
| 98 | 3.3.2 | 用户手册模板+初版 | manual | 4d | 2021-05-05 | 2021-05-05 |  |  |  |  |  |  |  | 刘书宇 | 1h | 120 |  | 选题说明、往期文档 | 小组会议、与助教讨论、线上讨论 | 用户手册初版 |
| 99 | 3.3.3 | SRS文档模板+初版 | manual | 4d | 2021-05-05 | 2021-05-05 |  |  |  |  |  |  |  | 刘书宇 | 1h | 120 |  | 选题说明、往期文档 | 小组会议、与助教讨论、线上讨论 | SRS文档初版 |
| 100 | 3.3.4 | 原型制作 | manual | 12d | 2021-05-06 | 2021-05-10 |  |  |  |  |  |  |  | 谢子文; 刘书宇 | 1h | 180 |  | 选题说明、往期文档 | 小组会议、与助教讨论、线上讨论 | 原型 |
| 101 | 3.3.5 | 用例文档编写 | manual | 12d | 2021-05-06 | 2021-05-10 |  |  |  |  |  |  |  | 彭昕怡; 张安硕 | 1h | 180 |  | 选题说明、往期文档 | 小组会议、与助教讨论、线上讨论 | 用例文档 |
| 102 | 3.3.6 | 数据字典+ER图 | manual | 12d | 2021-05-10 | 2021-05-12 |  |  |  |  |  |  |  | 梁泽生 | 1h | 120 |  | 选题说明、往期文档 | 小组会议、与助教讨论、线上讨论 | 数据字典+ER图 |
| 103 | 3.3.7 | 与助教会议，确认原型 | manual | 4d | 2021-05-10 | 2021-05-10 |  |  |  |  |  |  |  | 所有人 | 1h | 600 |  | 选题说明、往期文档 | 小组会议、与助教讨论、线上讨论 | 会议记录 |
| 104 | 4 | **控制** |  | 96.5d? | 2021-05-11 | 2021-06-11 | 34 | 2021-03-31 | 2021-06-01 | 180d | 0d |  |  |  | 41h | 7,200 | 谢子文、梁泽生、彭昕怡、张安硕、刘书宇 |  |  |  |
| 105 | 4.1 | **需求规格审核** |  | 36d | 2021-05-13 | 2021-05-24 |  | 2021-03-31 | 2021-05-12 | 124d |  |  |  |  | 8h | 3,300 | 谢子文、张安硕、彭昕怡、梁泽生、刘书宇 |  |  |  |
| 106 | 4.1.1 | 构想场景 | manual | 1d | 2021-05-11 | 2021-05-11 |  |  |  |  |  |  |  | 所有人 | 1h | 600 |  | 选题说明、往期文档 | 小组会议、与助教讨论、线上讨论 | 场景 |
| 107 | 4.1.2 | HMW会议 | manual | 1d | 2021-05-12 | 2021-05-12 |  |  |  |  |  |  |  | 所有人 | 1h | 600 |  | 选题说明、往期文档 | 小组会议、与助教讨论、线上讨论 | “会议桌”讨论记录 |
| 108 | 4.1.3 | 与助教确认修改后的原型 | manual | 2d | 2021-05-13 | 2021-05-13 |  |  |  |  |  |  |  | 所有人 | 1h | 600 |  | 选题说明、往期文档 | 小组会议、与助教讨论、线上讨论 | 会议录音 |
| 109 | 4.1.4 | 用例文档编写 | manual | 8d | 2021-05-19 | 2021-05-20 |  |  |  |  |  |  |  | 彭昕怡; 张安硕 | 1h | 180 |  | 选题说明、往期文档 | 小组会议、与助教讨论、线上讨论 | 用例文档 |
| 110 | 4.1.5 | JAD会议 | manual | 1d | 2021-05-18 | 2021-05-18 |  |  |  |  |  |  |  | 所有人 | 1h | 600 |  | 选题说明、往期文档 | 小组会议、与助教讨论、线上讨论 | 会议记录 |
| 111 | 4.1.6 | 原型制作 | manual | 3d | 2021-05-18 | 2021-05-18 |  |  |  |  |  |  |  | 刘书宇; 谢子文 | 1h | 180 |  | 选题说明、往期文档 | 小组会议、与助教讨论、线上讨论 | 原型 |
| 112 | 4.1.7 | 用户访谈 | manual | 1d | 2021-05-20 | 2021-05-20 |  |  |  |  |  |  |  | 梁泽生; 刘书宇; 彭昕怡; 谢子文; 张安硕 | 1h | 360 |  | 选题说明、往期文档 | 小组会议、与助教讨论、线上讨论 | 访谈记录 |
| 113 | 4.1.8 | 需求优先级 | manual | 2d | 2021-05-18 | 2021-05-18 |  |  |  |  |  |  |  | 彭昕怡; 张安硕 | 1h | 180 |  | 选题说明、往期文档 | 小组会议、与助教讨论、线上讨论 | 需求优先级 |

| ID | WBS | Task | Type | Duration | Start | Finish | Predecessors | Baseline start | Baseline finish | Baseline duration | Total slack | Constraint | Resources | Work | Cost | 负责人 | 输入 | 工具与技术 | 输出 |
| --- | --- | --- | --- | --- | --- | --- | --- | --- | --- | --- | --- | --- | --- | --- | --- | --- | --- | --- | --- |
| 114 | 3.2 | **需求管理过程** |  | 60.5d? | 2021-05-21 | 2021-06-11 | 105 | 2021-05-14 | 2021-06-01 | 52d |  |  |  | 33h | 3,900 | 谢子文、张安硕、彭昕怡、梁泽生、刘书宇 |  |  |  |
| 115 | 4.2.1 | 管理员界面原型第一版 | manual | 2d | 2021-05-24 | 2021-05-24 |  |  |  |  |  |  | 刘书宇 | 1h | 120 |  | 选题说明、往期文档 | 小组会议、与助教讨论、线上讨论 | 管理员界面原型第一版 |
| 116 | 4.2.2 | 原型完善 | manual | 3d | 2021-05-21 | 2021-05-21 |  |  |  |  |  |  | 谢子文 | 3h | 240 |  | 选题说明、往期文档 | 小组会议、与助教讨论、线上讨论 | 原型 |
| 117 | 4.2.3 | 总结需求文档修改 | manual | 2d | 2021-05-25 | 2021-05-25 |  |  |  |  |  |  | 梁泽生 | 2h | 180 |  | 选题说明、往期文档 | 小组会议、与助教讨论、线上讨论 | 总结需求文档 |
| 118 | 4.2.4 | 归纳需求冲突文档修改 | manual | 1d | 2021-05-25 | 2021-05-25 |  |  |  |  |  |  | 梁泽生 | 2h | 180 |  | 选题说明、往期文档 | 小组会议、与助教讨论、线上讨论 | 归纳需求冲突文档 |
| 119 | 4.2.5 | 管理员原型确认访谈 | manual | 1d | 2021-05-21 | 2021-05-21 |  |  |  |  |  |  | 彭昕怡 | 1h | 120 |  | 选题说明、往期文档 | 小组会议、与助教讨论、线上讨论 | 访谈记录 |
| 120 | 4.2.6 | 管理员打分 | manual | 1d | 2021-05-26 | 2021-05-26 |  |  |  |  |  |  | 彭昕怡 | 1h | 120 |  | 选题说明、往期文档 | 小组会议、与助教讨论、线上讨论 | 管理员打分表 |
| 121 | 4.2.7 | 愿景文档修改 | manual | 1d | 2021-05-25 | 2021-05-25 |  |  |  |  |  |  | 彭昕怡 | 2h | 180 |  | 选题说明、往期文档 | 小组会议、与助教讨论、线上讨论 | 愿景文档 |
| 122 | 4.2.8 | 邀请函文档修改 | manual | 8d | 2021-05-25 | 2021-05-26 |  |  |  |  |  |  | 刘书宇 | 2h | 180 |  | 选题说明、往期文档 | 小组会议、与助教讨论、线上讨论 | 邀请函文档 |
| 123 | 4.2.9 | 用户群文档修改 | manual | 8d | 2021-05-25 | 2021-05-26 |  |  |  |  |  |  | 刘书宇 | 2h | 180 |  | 选题说明、往期文档 | 小组会议、与助教讨论、线上讨论 | 用户群文档 |
| 124 | 4.2.10 | 用例文档修改 | manual | 8d | 2021-05-25 | 2021-05-26 |  |  |  |  |  |  | 彭昕怡; 张安硕 | 2h | 240 |  | 选题说明、往期文档 | 小组会议、与助教讨论、线上讨论 | 用例文档 |
| 125 | 4.2.11 | 测试用例文档修改 | manual | 2d | 2021-05-25 | 2021-05-25 |  |  |  |  |  |  | 刘书宇 | 2h | 180 |  | 选题说明、往期文档 | 小组会议、与助教讨论、线上讨论 | 测试用例文档 |
| 126 | 4.2.12 | SRS文档修改 | manual | 12d | 2021-05-25 | 2021-05-27 |  |  |  |  |  |  | 刘书宇 | 2h | 180 |  | 选题说明、往期文档 | 小组会议、与助教讨论、线上讨论 | SRS文档 |
| 127 | 4.2.13 | 数据字典、ER图文档修改 | manual | 8d | 2021-05-25 | 2021-05-26 |  |  |  |  |  |  | 梁泽生 | 2h | 180 |  | 选题说明、往期文档 | 小组会议、与助教讨论、线上讨论 | 数据字典、ER图文档 |
| 128 | 4.2.14 | 小组需求评审会议 | manual | 2d | 2021-05-25 | 2021-05-25 |  |  |  |  |  |  | 所有人 | 2h | 900 |  | 选题说明、往期文档 | 小组会议、与助教讨论、线上讨论 | 会议记录 |
| 129 | 4.2.15 | 优先级打分文档 | manual | 1d | 2021-05-25 | 2021-05-25 |  |  |  |  |  |  | 张安硕 | 1h | 120 |  | 选题说明、往期文档 | 小组会议、与助教讨论、线上讨论 | 优先级打分文档 |
| 130 | 4.2.16 | 汇报PPT修改 | manual | 2d | 2021-05-26 | 2021-05-26 |  |  |  |  |  |  | 谢子文 | 1h | 120 |  | 选题说明、往期文档 | 小组会议、与助教讨论、线上讨论 | 汇报PPT |
| 131 | 4.2.17 | 甘特图修改 | manual | 1d | 2021-05-26 | 2021-05-26 |  |  |  |  |  |  | 谢子文 | 1h | 120 |  | 选题说明、往期文档 | 小组会议、与助教讨论、线上讨论 | 甘特图 |
| 132 | 4.2.18 | 用户手册文档修改 | manual | 1d | 2021-05-25 | 2021-05-25 |  |  |  |  |  |  | 刘书宇 | 1h | 120 |  | 选题说明、往期文档 | 小组会议、与助教讨论、线上讨论 | 用户手册文档 |
| 133 | 4.2.19 | 原型完善 | manual | 3d | 2021-05-25 | 2021-05-25 |  |  |  |  |  |  | 谢子文 | 3h | 240 |  | 选题说明、往期文档 | 小组会议、与助教讨论、线上讨论 | 原型 |
| 134 | 5 | **收尾** |  | 104d | 2021-05-20 | 2021-06-24 | 104 | 2021-06-04 | 2021-06-10 | 20d |  |  |  | 28h | 5,280 | 谢子文、梁泽生、彭昕怡、张安硕、刘书宇 |  |  |  |
| 135 | 5 | **需求工程总结** |  | 76d | 2021-06-02 | 2021-06-28 | 114 | 2021-06-04 | 2021-06-10 | 20d | 0d |  |  | 28h | 5,280 | 谢子文、梁泽生、彭昕怡、张安硕、刘书宇 |  |  |  |
| 136 | 5.1.1 | 原型修改 | manual | 8d | 2021-06-02 | 2021-06-03 |  |  |  |  |  |  | 谢子文 | 2h | 180 |  | 选题说明、往期文档 | 小组会议、与助教讨论、线上讨论 | 原型 |
| 137 | 5.1.2 | 小组研讨会议 |  | 0.5d | 2021-06-11 | 2021-06-11 |  | 2021-06-04 | 2021-06-04 | 4d | 47d | finish no earlier than 2021-06-10 | 所有人 | 1h | 600 | 谢子文、梁泽生、彭昕怡、张安硕、刘书宇 | 选题说明、往期文档 | 小组会议、与助教讨论、线上讨论 | 会议记录 |
| 138 | 5.1.3 | 访谈用户 | manual | 12d | 2021-06-16 | 2021-06-18 |  |  |  |  |  |  | 彭昕怡; 张安硕 | 2h | 240 |  | 选题说明、往期文档 | 小组会议、与助教讨论、线上讨论 | 访谈记录 |
| 139 | 5.1.4 | 确认变更需求 | manual | 4d | 2021-06-10 | 2021-06-10 |  |  |  |  |  |  | 所有人 | 2h | 900 |  | 选题说明、往期文档 | 小组会议、与助教讨论、线上讨论 | 变更报告 |
| 140 | 5.1.5 | CCB章程编写 | manual | 12d | 2021-06-15 | 2021-06-17 |  |  |  |  |  |  | 刘书宇 | 2h | 180 |  | 选题说明、往期文档 | 小组会议、与助教讨论、线上讨论 | CCB章程 |
| 141 | 5.1.6 | CCB会议 | manual | 1d | 2021-06-21 | 2021-06-21 |  |  |  |  |  |  | 刘书宇 | 1h | 120 |  | 选题说明、往期文档 | 小组会议、与助教讨论、线上讨论 | 会议记录 |
| 142 | 5.1.7 | 需求变更影响分析报告 | manual | 2d | 2021-06-21 | 2021-06-21 |  |  |  |  |  |  | 彭昕怡; 谢子文; 张安硕 | 2h | 300 |  | 选题说明、往期文档 | 小组会议、与助教讨论、线上讨论 | 需求变更影响分析报告 |
| 143 | 5.1.8 | 需求跟踪矩阵 | manual | 3d | 2021-06-21 | 2021-06-21 |  |  |  |  |  |  | 梁泽生 | 3h | 240 |  | 选题说明、往期文档 | 小组会议、与助教讨论、线上讨论 | 需求跟踪矩阵 |

| ID | WBS | Task | Type | Duration | Start | Finish | Predecessors | Baseline start | Baseline finish | Baseline duration | Total slack | Resources | Work | Cost | 输入 | 工具与技术 | 输出 | 负责人 |
| --- | --- | --- | --- | --- | --- | --- | --- | --- | --- | --- | --- | --- | --- | --- | --- | --- | --- | --- |
| 144 | 5.1.9 | **项目总结阶段** |  | 12d | 2021-06-24 | 2021-06-28 |  | 2021-06-10 | 2021-06-10 | 0d | 0d |  | 13h | 2,520 |  |  |  |  |
| 145 | 5.1.9.1 | 总结报告文档编写 | manual | 12d | 2021-06-24 | 2021-06-28 |  |  |  |  |  | 刘书宇 | 1h | 120 | 选题说明、往期文档 | 小组会议、与助教讨论、线上讨论 | 总结报告文档 |  |
| 146 | 5.1.9.2 | 设计计划文档编写 | manual | 12d | 2021-06-24 | 2021-06-28 |  |  |  |  |  | 谢子文 | 1h | 120 | 选题说明、往期文档 | 小组会议、与助教讨论、线上讨论 | 设计计划文档 |  |
| 147 | 5.1.9.3 | 部署计划文档编写 | manual | 12d | 2021-06-24 | 2021-06-28 |  |  |  |  |  | 梁泽生 | 1h | 120 | 选题说明、往期文档 | 小组会议、与助教讨论、线上讨论 | 部署计划文档 |  |
| 148 | 5.1.9.4 | 开发计划文档编写 | manual | 12d | 2021-06-24 | 2021-06-28 |  |  |  |  |  | 张安硕 | 1h | 120 | 选题说明、往期文档 | 小组会议、与助教讨论、线上讨论 | 开发计划文档 |  |
| 149 | 5.1.9.5 | 测试计划文档编写 | manual | 12d | 2021-06-24 | 2021-06-28 |  |  |  |  |  | 彭昕怡 | 1h | 120 | 选题说明、往期文档 | 小组会议、与助教讨论、线上讨论 | 测试计划文档 |  |
| 150 | 5.1.9.6 | 每名小组成员自我总结 | manual | 12d | 2021-06-24 | 2021-06-28 |  |  |  |  |  | 所有人 | 1h | 600 | 选题说明、往期文档 | 小组会议、与助教讨论、线上讨论 | 自我总结 |  |
| 151 | 5.1.9.7 | 小组成员总结互评 | manual | 12d | 2021-06-24 | 2021-06-28 |  |  |  |  |  | 所有人 | 1h | 600 | 选题说明、往期文档 | 小组会议、与助教讨论、线上讨论 | 总结互评 |  |
| 152 | 5.1.9.8 | 配置管理工具和需求管理工具收尾 | manual | 12d | 2021-06-24 | 2021-06-28 |  |  |  |  |  | 梁泽生 | 1h | 120 | 选题说明、往期文档 | 小组会议、与助教讨论、线上讨论 | 工具内容 |  |
| 153 | 5.1.9.9 | 报告PPT初稿 | manual | 12d | 2021-06-24 | 2021-06-28 |  |  |  |  |  | 梁泽生 | 1h | 120 | 选题说明、往期文档 | 小组会议、与助教讨论、线上讨论 | 报告PPT |  |
| 154 | 5.1.9.10 | 往期文档收尾 | manual | 12d | 2021-06-24 | 2021-06-28 |  |  |  |  |  | 张安硕 | 1h | 120 | 选题说明、往期文档 | 小组会议、与助教讨论、线上讨论 | 往期文档 |  |
| 155 | 5.1.9.11 | 团建记录、会议记录收尾 | manual | 12d | 2021-06-24 | 2021-06-28 |  |  |  |  |  | 彭昕怡 | 1h | 120 | 选题说明、往期文档 | 小组会议、与助教讨论、线上讨论 | 记录文档 |  |
| 156 | 5.1.9.12 | 评分梳理 | manual | 12d | 2021-06-24 | 2021-06-28 |  |  |  |  |  | 刘书宇 | 1h | 120 | 选题说明、往期文档 | 小组会议、与助教讨论、线上讨论 | 评分文档 |  |
| 157 | 5.1.9.13 | 完善PPT | manual | 12d | 2021-06-24 | 2021-06-28 |  |  |  |  |  | 刘书宇 | 1h | 120 | 选题说明、往期文档 | 小组会议、与助教讨论、线上讨论 | 报告PPT |  |
| 158 | 4 | **翻转课堂** |  | 200d | 2021-03-18 | 2021-05-25 |  | 2021-03-18 | 2021-05-20 | 182d | 0d |  | 21h | 2,340 |  |  |  | 谢子文、梁泽生、彭昕怡、张安硕、刘书宇 |
| 159 | 6.1 | **UML概述翻转课堂** |  | 34d | 2021-03-18 | 2021-03-30 |  | 2021-03-18 | 2021-03-30 | 34d | 0d |  | 3h | 360 |  |  |  | 谢子文、梁泽生、彭昕怡、张安硕、刘书宇 |
| 160 | 6.1.1 | 学习翻转课堂内容 | manual | 8d | 2021-03-18 | 2021-03-19 |  | 2021-03-18 | 2021-03-19 | 8d |  | 刘书宇 | 1h | 120 |  |  |  | 谢子文 |
| 161 | 6.1.2 | 制作ppt并修改 | manual | 8d | 2021-03-23 | 2021-03-24 |  | 2021-03-23 | 2021-03-24 | 8d |  | 梁泽生 | 1h | 120 |  |  |  | 梁泽生 |
| 162 | 6.1.3 | 翻转课堂讲解 | manual | 2d | 2021-03-30 | 2021-03-30 |  | 2021-03-30 | 2021-03-30 | 2d |  | 彭昕怡 | 1h | 120 |  |  |  | 彭昕怡 |
| 163 | 6.2 | **UML工具翻转课堂** |  | 36d | 2021-03-25 | 2021-04-06 | 161 | 2021-03-25 | 2021-04-06 | 36d |  |  | 2h | 300 |  |  |  | 谢子文、梁泽生、彭昕怡、张安硕、刘书宇 |
| 164 | 6.2.1 | 学习翻转课堂内容 | manual | 8d | 2021-03-23 | 2021-03-24 |  | 2021-03-23 | 2021-03-24 | 8d |  | 张安硕 | 1h | 120 |  |  |  | 张安硕 |
| 165 | 6.2.2 | 制作ppt并修改 | manual | 4d | 2021-04-01 | 2021-04-01 |  | 2021-03-30 | 2021-03-31 | 8d |  | 梁泽生 | 1h | 120 |  |  |  | 刘书宇 |
| 166 | 6.2.3 | 翻转课堂讲解 | milestone, manual | 0d | 2021-04-06 | 2021-04-06 |  | 2021-04-06 | 2021-04-06 | 2d |  | 谢子文 |  | 60 |  |  |  | 谢子文 |
| 167 | 6.3 | **UML基础1翻转课堂** |  | 36d | 2021-04-01 | 2021-04-13 | 165 | 2021-04-01 | 2021-04-13 | 36d |  |  | 3h | 360 |  |  |  | 谢子文、梁泽生、彭昕怡、张安硕、刘书宇 |
| 168 | 6.3.1 | 学习翻转课堂内容 | manual | 8d | 2021-04-01 | 2021-04-02 |  | 2021-04-01 | 2021-04-02 | 8d |  | 梁泽生 | 1h | 120 |  |  |  | 梁泽生 |
| 169 | 6.3.2 | 制作ppt并修改 | manual | 4d | 2021-04-07 | 2021-04-07 |  | 2021-04-06 | 2021-04-07 | 8d |  | 彭昕怡 | 1h | 120 |  |  |  | 彭昕怡 |
| 170 | 6.3.3 | 翻转课堂讲解 | manual | 2d | 2021-04-13 | 2021-04-13 |  | 2021-04-13 | 2021-04-13 | 2d |  | 张安硕 | 1h | 120 |  |  |  | 张安硕 |

| ID | WBS | Task | Type | Duration | Start | Finish | Predecessors | Baseline start | Baseline finish | Baseline duration | Resources | Work | Cost | 负责人 |
| --- | --- | --- | --- | --- | --- | --- | --- | --- | --- | --- | --- | --- | --- | --- |
| 171 | 6.4 | **UML基础2翻转课堂** |  | 36d | 2021-04-08 | 2021-04-20 | 169 | 2021-04-08 | 2021-04-20 | 36d |  | 3h | 360 | 谢子文、梁泽生、彭昕怡、张安硕、刘书宇 |
| 172 | 6.4.1 | 学习翻转课堂内容 | manual | 8d | 2021-04-09 | 2021-04-12 |  | 2021-04-08 | 2021-04-09 | 8d | 刘书宇 | 1h | 120 | 刘书宇 |
| 173 | 6.4.2 | 制作ppt并修改 | manual | 8d | 2021-04-13 | 2021-04-14 |  | 2021-04-13 | 2021-04-14 | 8d | 谢子文 | 1h | 120 | 谢子文 |
| 174 | 6.4.3 | 翻转课堂讲解 | manual | 2d | 2021-04-20 | 2021-04-20 |  | 2021-04-20 | 2021-04-20 | 2d | 梁泽生 | 1h | 120 | 梁泽生 |
| 175 | 6.5 | **UML基础3翻转课堂** |  | 36d | 2021-04-15 | 2021-04-27 | 173 | 2021-04-15 | 2021-04-27 | 36d |  | 7h | 600 | 谢子文、梁泽生、彭昕怡、张安硕、刘书宇 |
| 176 | 6.5.1 | 学习翻转课堂内容 | manual | 8d | 2021-04-15 | 2021-04-16 |  | 2021-04-15 | 2021-04-16 | 8d | 彭昕怡 | 1h | 120 | 彭昕怡 |
| 177 | 6.5.2 | 制作ppt并修改 | manual | 8d | 2021-04-20 | 2021-04-21 |  | 2021-04-20 | 2021-04-21 | 8d | 张安硕 | 1h | 120 | 张安硕 |
| 178 | 6.5.3 | 翻转课堂讲解 | manual | 4d | 2021-04-27 | 2021-04-27 |  | 2021-04-27 | 2021-04-27 | 2d | 刘书宇 | 5h | 360 | 刘书宇 |
| 179 | 6.6 | **UML基础4翻转课堂** |  | 100d | 2021-04-22 | 2021-05-25 | 177 | 2021-04-22 | 2021-05-04 | 36d |  | 3h | 360 | 谢子文、梁泽生、彭昕怡、张安硕、刘书宇 |
| 180 | 6.6.1 | 学习翻转课堂内容 | manual | 8d | 2021-04-22 | 2021-04-23 |  | 2021-04-22 | 2021-04-23 | 8d | 谢子文 | 1h | 120 | 谢子文 |
| 181 | 6.6.2 | 制作ppt并修改 | manual | 8d | 2021-04-28 | 2021-04-30 |  | 2021-04-27 | 2021-04-28 | 8d | 梁泽生 | 1h | 120 | 梁泽生 |
| 182 | 6.6.3 | 翻转课堂讲解 | manual | 52d | 2021-05-10 | 2021-05-25 |  | 2021-05-04 | 2021-05-04 | 2d | 彭昕怡 | 1h | 120 | 彭昕怡 |
